# CoffeeLab

How a schedule from MS Project changed from version to version. A marks actual dates.

## Version 1 (saved 2019-11-27, file Harmonogram 2.0.mpp)

| ID | WBS | Task | Duration | Start | Finish | Predecessors | Total float | Constraint |
| --- | --- | --- | --- | --- | --- | --- | --- | --- |
| 1 | 1 | **Zarządzanie projektem** | 109.5d? | 2019-10-28 | 2020-04-08 |  | 0d |  |
| 2 |  | <Nowe zadanie> | 1d? | 2019-10-28 | 2019-10-28 |  | 108.5d |  |
| 3 |  | Zarządzanie projektem | 104d? | 2019-10-28 | 2020-03-31 |  | 5.5d | start no earlier than 2019-10-28 |
| 4 |  | Stworzenie karty projektu | 10d? | 2019-10-28 | 2019-11-08 |  | 0d | start no earlier than 2019-10-28 |
| 5 |  | Zatwierdzenie karty projektu i przyjęcie do realizacji | 0d | 2019-11-08 | 2019-11-08 | 4 | 0d |  |
| 6 |  | Planowanie pracy | 14d | 2019-11-12 | 2019-11-29 | 5 | 0d |  |
| 7 |  | Rekrutacja pracowników | 14d? | 2019-11-12 | 2019-11-29 | 5 | 0d | start no earlier than 2019-11-12 |
| 8 |  | Pozyskiwanie zasobów do pracy | 14d? | 2019-11-12 | 2019-11-29 | 5 | 0d |  |
| 9 |  | Organizacja stanowisk pracy | 14d? | 2019-11-12 | 2019-11-29 | 5 | 0d |  |
| 10 |  | Delegowanie zasobów do pracy | 2d | 2019-12-02 | 2019-12-03 | 9 | 83.5d | start no earlier than 2019-11-28 |
| 11 |  | Zapewnienie możliwości stworzenia odpowiedniej architektury aplikacji | 14d? | 2019-12-16 | 2020-01-14 | 49 | 0.5d |  |
| 12 |  | Tworzenie dokumentacji projektu | 107d | 2019-10-28 | 2020-04-03 |  | 2.5d |  |
| 13 |  | Organizowanie osób do testów z grupy interesariuszy | 5d | 2019-12-09 | 2019-12-13 | 37 | 65.5d | start no earlier than 2019-12-02 |
| 14 |  | Przeprowadzanie testów z interesariuszami | 5d | 2019-12-16 | 2019-12-20 | 13 | 65.5d | start no earlier than 2019-12-09 |
| 15 |  | Tworzenie raportów z postępu projektu | 107d? | 2019-10-28 | 2020-04-03 |  | 2.5d |  |
| 16 |  | Zamknięcie projektu | 0d | 2020-04-08 | 2020-04-08 | 3FF, 12FF, 15FF, 71 | 0d |  |
| 17 |  | Utworzenie zespołu projektowego | 0d | 2019-11-29 | 2019-11-29 | 9, 8, 7, 6 | 0d | finish no earlier than 2019-11-28 |
| 18 | 2 | **Prowadzenie badań** | 47.5d? | 2019-12-02 | 2020-02-14 |  | 22d |  |
| 19 |  | Dokumentowanie wiedzy książkowej | 15d? | 2019-12-02 | 2019-12-20 | 17 | 38d | start no earlier than 2019-11-28 |
| 20 |  | Research zasobów potrzebnych do badań | 1d? | 2019-12-02 | 2019-12-02 | 17 | 22d | start no earlier than 2019-11-28 |
| 21 |  | Organizacja potrzenych do badań zasobów | 4d? | 2019-12-03 | 2019-12-06 | 20 | 22d |  |
| 22 |  | Przeprowadzenie badań | 15d? | 2019-12-09 | 2020-01-07 | 21 | 22d | start no earlier than 2019-11-28 |
| 23 |  | Sporządzenie raportów z badań | 4d? | 2020-01-08 | 2020-01-13 | 22 | 22d |  |
| 24 |  | Analiza danych z badań | 6d? | 2020-01-14 | 2020-01-21 | 23 | 22d | start no earlier than 2019-12-03 |
| 25 |  | Udokumentowanie wniosków z badań | 6d? | 2020-01-14 | 2020-01-21 | 23, 24FF | 22d | start no earlier than 2019-12-18 |
| 26 |  | Zebranie i spisanie podstawowych informacji o kawie dla niewdrożonych użytkowników | 10.5d? | 2019-12-30 | 2020-01-15 | 19 | 38d |  |
| 27 |  | Zredagowanie podstawowych informacji o kawie | 22d? | 2020-01-15 | 2020-02-14 | 26 | 38d |  |
| 28 | 3 | **Projektowanie oprogramowania** | 29.5d? | 2019-12-02 | 2020-01-21 |  | 0d |  |
| 29 |  | Specyfikacja wymagań funkcjonalnych | 3d? | 2019-12-02 | 2019-12-04 | 17 | 0d | start no earlier than 2019-12-01 |
| 30 |  | Specyfikacja wymagań interfejsowych | 3.5d? | 2019-12-05 | 2019-12-10 | 29 | 0d |  |
| 31 |  | Specyfikacja wymagań prototypu | 7d? | 2019-12-10 | 2019-12-19 | 30 | 64d |  |
| 32 |  | Specyfikacja wymagań pełnej aplikacji | 8d? | 2019-12-19 | 2020-01-09 | 31 | 64d |  |
| 33 |  | Tworzenie makiet | 18d? | 2019-12-10 | 2020-01-14 | 30, 44FF+6d, 40FF+6d | 0d |  |
| 34 |  | Wytwarzanie potrzebnych do makiet grafik | 18d? | 2019-12-10 | 2020-01-14 | 30, 33FF | 61d |  |
| 35 |  | Wytwarzanie potrzebnych do makiet dźwięków | 18d? | 2019-12-10 | 2020-01-14 | 30, 33FF | 61d |  |
| 36 |  | Testowanie makiet | 18d? | 2019-12-10 | 2020-01-14 | 30, 33FF | 0d |  |
| 37 |  | Zaprojektowanie systemu oceniania przepisów | 2d? | 2019-12-05 | 2019-12-06 | 29 | 13.5d |  |
| 38 |  | Specyfikacja wymagań bazy danych do uczenia maszynowego | 2d? | 2019-12-09 | 2019-12-10 | 37 | 13.5d |  |
| 39 |  | Projekt bazy danych do uczenia maszynowego | 4d? | 2019-12-11 | 2019-12-16 | 38 | 13.5d |  |
| 40 |  | Zaprojektowanie miniencyklopedii | 4d? | 2019-12-05 | 2019-12-10 | 29 | 11d |  |
| 41 |  | Zaprojektowanie bazy danych dla miniencyklopedii | 6.5d? | 2019-12-11 | 2019-12-19 | 40 | 11d |  |
| 42 |  | Utworzenie dokumentu z projektem aplikacji | 5d? | 2020-01-14 | 2020-01-21 | 33, 36, 39, 41 | 0d | start no earlier than 2020-01-04 |
| 43 |  | Poprawianie wymagań aplikacji w zależności od wyników testów | 5d | 2019-12-30 | 2020-01-07 | 14 | 65.5d |  |
| 44 |  | Zaprojektowanie działania asystenta kawy | 10.5d? | 2019-12-05 | 2019-12-19 | 29 | 5d |  |
| 45 | 4 | **Wytwarzanie oprogramowania** | 71d? | 2019-12-10 | 2020-03-27 |  | 0.5d |  |
| 46 |  | Projektowanie algorytmów dobierających przepis | 5d? | 2020-01-22 | 2020-01-28 | 25 | 22d |  |
| 47 |  | Tworzenie protorypów systemów dobierających przepis | 12.5d? | 2020-01-29 | 2020-02-14 | 46 | 22d |  |
| 48 |  | Wybranie najlepszego prototypu | 2.5d? | 2020-02-14 | 2020-02-18 | 47 | 22d |  |
| 49 |  | Research architektury aplikacji | 4d? | 2019-12-10 | 2019-12-16 | 30 | 0.5d |  |
| 50 |  | Konfiguracja architektury aplikacji | 4.5d? | 2020-01-14 | 2020-01-20 | 11 | 0.5d |  |
| 51 |  | Implementacja algorytmów dobierających przepis | 7d? | 2020-02-19 | 2020-02-27 | 50, 48 | 22d | start no earlier than 2020-01-04 |
| 52 |  | Implementacja makiet jako funkcjonalnego interfejsu | 26d? | 2020-01-21 | 2020-02-26 | 50, 42 | 0d |  |
| 53 |  | Tworzenie testów | 23d | 2020-01-14 | 2020-02-14 | 50SS | 30d | start no earlier than 2019-12-29 |
| 54 |  | Testowanie funkcjonalności | 26d | 2020-01-21 | 2020-02-26 | 52FF, 50, 42, 53FF | 22d | start no earlier than 2020-01-13 |
| 55 |  | Przygotowanie prototypu aplikacji | 5.5d? | 2020-02-28 | 2020-03-06 | 52, 51 | 22d |  |
| 56 |  | Implementacja systemu ocen przepisów | 6.5d? | 2020-02-26 | 2020-03-05 | 52 | 0d |  |
| 57 |  | Implementacja bazy danych do uczenia maszynowego | 2.5d? | 2020-03-06 | 2020-03-10 | 56 | 0d |  |
| 58 |  | Prototypowanie uczenia maszynowego | 9d? | 2020-03-10 | 2020-03-23 | 57 | 0d |  |
| 59 |  | Implementacja uczenia maszynowego | 4d? | 2020-03-23 | 2020-03-27 | 58 | 0d |  |
| 60 |  | Implementacja bazy danych miniencyklopedii | 10.5d? | 2020-01-21 | 2020-02-04 | 42 | 30.5d |  |
| 61 |  | Uzupełnienie bazy danych miniencyklopedii | 15d? | 2020-02-05 | 2020-02-25 | 60 | 30.5d |  |
| 62 |  | Utworzenie możliwości zdalnego umieszczania reklam w aplikacji | 1d? | 2020-03-06 | 2020-03-09 | 55 | 22d |  |
| 63 |  | Oddanie w pełni funkcjonalnej aplikacji | 0d | 2020-03-27 | 2020-03-27 | 52, 60, 54, 59 | 0d |  |
| 64 |  | Prowadzenie dokumentacji | 71d | 2019-12-10 | 2020-03-27 | 63FF, 49SS | 8d | start no earlier than 2019-12-10 |
| 65 | 5 | **Oddanie projektu** | 8d? | 2020-03-27 | 2020-04-08 |  | 0d |  |
| 66 |  | Przekazanie stworzonej dokumentacji | 1d? | 2020-03-27 | 2020-03-30 | 63 | 0.5d |  |
| 67 |  | Umieszczenie aplikacji na Google Play | 6d? | 2020-03-27 | 2020-04-06 | 63 | 0d |  |
| 68 |  | Umieszczenie aplikacji na App Store | 6d? | 2020-03-27 | 2020-04-06 | 63 | 0d |  |
| 69 |  | Release dla wszystkich użytkowników | 1d? | 2020-04-06 | 2020-04-07 | 67, 68 | 0d |  |
| 70 |  | Wdrożenie osób utrzymujących aplikację | 5.5d? | 2020-03-30 | 2020-04-06 | 66 | 0.5d |  |

| ID | Task | Duration | Start | Finish | Predecessors | Total float | Constraint |
| --- | --- | --- | --- | --- | --- | --- | --- |
| 71 | Oddanie projektu | 1d? | 2020-04-07 | 2020-04-08 | 69, 66, 70 | 0d | start no earlier than 2020-03-22 |

## Version 2 (saved 2019-12-02, file Harmonogram 2.0 copy.mpp)

Note of the change: wip harmo 2.0 wdzpi

Last finish stays 2020-04-08.

Added:

| ID | Task | Duration | Start | Finish | Predecessors | Constraint | Resources |
| --- | --- | --- | --- | --- | --- | --- | --- |
| 2 | **Spotkanie okresowe** | 108d | 2019-10-29 | 2020-04-07 |  |  | Project Manager |
| 3 | Spotkanie okresowe 1 | 1d | 2019-10-29 | 2019-10-29 |  | start no earlier than 2019-10-29 | Project Manager |
| 4 | Spotkanie okresowe 2 | 1d | 2019-11-05 | 2019-11-05 |  | start no earlier than 2019-11-05 | Project Manager |
| 5 | Spotkanie okresowe 3 | 1d | 2019-11-12 | 2019-11-12 |  | start no earlier than 2019-11-12 | Project Manager |
| 6 | Spotkanie okresowe 4 | 1d | 2019-11-19 | 2019-11-19 |  | start no earlier than 2019-11-19 | Project Manager |
| 7 | Spotkanie okresowe 5 | 1d | 2019-11-26 | 2019-11-26 |  | start no earlier than 2019-11-26 | Project Manager |
| 8 | Spotkanie okresowe 6 | 1d | 2019-12-03 | 2019-12-03 |  | start no earlier than 2019-12-03 | Project Manager |
| 9 | Spotkanie okresowe 7 | 1d | 2019-12-10 | 2019-12-10 |  | start no earlier than 2019-12-10 | Project Manager |
| 10 | Spotkanie okresowe 8 | 1d | 2019-12-17 | 2019-12-17 |  | start no earlier than 2019-12-17 | Project Manager |
| 11 | Spotkanie okresowe 9 | 1d | 2019-12-31 | 2019-12-31 |  | start no earlier than 2019-12-31 | Project Manager |
| 12 | Spotkanie okresowe 10 | 1d | 2020-01-07 | 2020-01-07 |  | start no earlier than 2020-01-07 | Project Manager |
| 13 | Spotkanie okresowe 11 | 1d | 2020-01-14 | 2020-01-14 |  | start no earlier than 2020-01-14 | Project Manager |
| 14 | Spotkanie okresowe 12 | 1d | 2020-01-21 | 2020-01-21 |  | start no earlier than 2020-01-21 | Project Manager |
| 15 | Spotkanie okresowe 13 | 1d | 2020-01-28 | 2020-01-28 |  | start no earlier than 2020-01-28 | Project Manager |
| 16 | Spotkanie okresowe 14 | 1d | 2020-02-04 | 2020-02-04 |  | start no earlier than 2020-02-04 | Project Manager |
| 17 | Spotkanie okresowe 15 | 1d | 2020-02-11 | 2020-02-11 |  | start no earlier than 2020-02-11 | Project Manager |
| 18 | Spotkanie okresowe 16 | 1d | 2020-02-18 | 2020-02-18 |  | start no earlier than 2020-02-18 | Project Manager |
| 19 | Spotkanie okresowe 17 | 1d | 2020-02-25 | 2020-02-25 |  | start no earlier than 2020-02-25 | Project Manager |
| 20 | Spotkanie okresowe 18 | 1d | 2020-03-03 | 2020-03-03 |  | start no earlier than 2020-03-03 | Project Manager |
| 21 | Spotkanie okresowe 19 | 1d | 2020-03-10 | 2020-03-10 |  | start no earlier than 2020-03-10 | Project Manager |
| 22 | Spotkanie okresowe 20 | 1d | 2020-03-17 | 2020-03-17 |  | start no earlier than 2020-03-17 | Project Manager |
| 23 | Spotkanie okresowe 21 | 1d | 2020-03-24 | 2020-03-24 |  | start no earlier than 2020-03-24 | Project Manager |
| 24 | Spotkanie okresowe 22 | 1d | 2020-03-31 | 2020-03-31 |  | start no earlier than 2020-03-31 | Project Manager |
| 25 | Spotkanie okresowe 23 | 1d | 2020-04-07 | 2020-04-07 |  | start no earlier than 2020-04-07 | Project Manager |
| 35 | **Tworzenie dokumentacji projektu** | 94d | 2019-11-15 | 2020-04-03 |  |  |  |
| 36 | Tworzenie dokumentacji projektu 1 | 1d | 2019-11-15 | 2019-11-15 |  | start no earlier than 2019-11-15 |  |
| 37 | Tworzenie dokumentacji projektu 2 | 1d | 2019-11-22 | 2019-11-22 |  | start no earlier than 2019-11-22 |  |
| 38 | Tworzenie dokumentacji projektu 3 | 1d | 2019-11-29 | 2019-11-29 |  | start no earlier than 2019-11-29 |  |
| 39 | Tworzenie dokumentacji projektu 4 | 1d | 2019-12-06 | 2019-12-06 |  | start no earlier than 2019-12-06 |  |
| 40 | Tworzenie dokumentacji projektu 5 | 1d | 2019-12-13 | 2019-12-13 |  | start no earlier than 2019-12-13 |  |
| 41 | Tworzenie dokumentacji projektu 6 | 1d | 2019-12-20 | 2019-12-20 |  | start no earlier than 2019-12-20 |  |
| 42 | Tworzenie dokumentacji projektu 7 | 1d | 2020-01-03 | 2020-01-03 |  | start no earlier than 2020-01-03 |  |
| 43 | Tworzenie dokumentacji projektu 8 | 1d | 2020-01-10 | 2020-01-10 |  | start no earlier than 2020-01-10 |  |
| 44 | Tworzenie dokumentacji projektu 9 | 1d | 2020-01-17 | 2020-01-17 |  | start no earlier than 2020-01-17 |  |
| 45 | Tworzenie dokumentacji projektu 10 | 1d | 2020-01-24 | 2020-01-24 |  | start no earlier than 2020-01-24 |  |
| 46 | Tworzenie dokumentacji projektu 11 | 1d | 2020-01-31 | 2020-01-31 |  | start no earlier than 2020-01-31 |  |
| 47 | Tworzenie dokumentacji projektu 12 | 1d | 2020-02-07 | 2020-02-07 |  | start no earlier than 2020-02-07 |  |
| 48 | Tworzenie dokumentacji projektu 13 | 1d | 2020-02-14 | 2020-02-14 |  | start no earlier than 2020-02-14 |  |
| 49 | Tworzenie dokumentacji projektu 14 | 1d | 2020-02-21 | 2020-02-21 |  | start no earlier than 2020-02-21 |  |
| 50 | Tworzenie dokumentacji projektu 15 | 1d | 2020-02-28 | 2020-02-28 |  | start no earlier than 2020-02-28 |  |
| 51 | Tworzenie dokumentacji projektu 16 | 1d | 2020-03-06 | 2020-03-06 |  | start no earlier than 2020-03-06 |  |
| 52 | Tworzenie dokumentacji projektu 17 | 1d | 2020-03-13 | 2020-03-13 |  | start no earlier than 2020-03-13 |  |
| 53 | Tworzenie dokumentacji projektu 18 | 1d | 2020-03-20 | 2020-03-20 |  | start no earlier than 2020-03-20 |  |
| 54 | Tworzenie dokumentacji projektu 19 | 1d | 2020-03-27 | 2020-03-27 |  | start no earlier than 2020-03-27 |  |
| 55 | Tworzenie dokumentacji projektu 20 | 1d | 2020-04-03 | 2020-04-03 |  | start no earlier than 2020-04-03 |  |
| 58 | **Tworzenie raportów z postępu projektu** | 94d | 2019-11-14 | 2020-04-02 |  |  |  |
| 59 | Tworzenie raportów z postępu projektu 1 | 1d | 2019-11-14 | 2019-11-14 |  | start no earlier than 2019-11-14 |  |
| 60 | Tworzenie raportów z postępu projektu 2 | 1d | 2019-11-21 | 2019-11-21 |  | start no earlier than 2019-11-21 |  |
| 61 | Tworzenie raportów z postępu projektu 3 | 1d | 2019-11-28 | 2019-11-28 |  | start no earlier than 2019-11-28 |  |
| 62 | Tworzenie raportów z postępu projektu 4 | 1d | 2019-12-05 | 2019-12-05 |  | start no earlier than 2019-12-05 |  |
| 63 | Tworzenie raportów z postępu projektu 5 | 1d | 2019-12-12 | 2019-12-12 |  | start no earlier than 2019-12-12 |  |
| 64 | Tworzenie raportów z postępu projektu 6 | 1d | 2019-12-19 | 2019-12-19 |  | start no earlier than 2019-12-19 |  |
| 65 | Tworzenie raportów z postępu projektu 7 | 1d | 2020-01-02 | 2020-01-02 |  | start no earlier than 2020-01-02 |  |
| 66 | Tworzenie raportów z postępu projektu 8 | 1d | 2020-01-09 | 2020-01-09 |  | start no earlier than 2020-01-09 |  |
| 67 | Tworzenie raportów z postępu projektu 9 | 1d | 2020-01-16 | 2020-01-16 |  | start no earlier than 2020-01-16 |  |
| 68 | Tworzenie raportów z postępu projektu 10 | 1d | 2020-01-23 | 2020-01-23 |  | start no earlier than 2020-01-23 |  |
| 69 | Tworzenie raportów z postępu projektu 11 | 1d | 2020-01-30 | 2020-01-30 |  | start no earlier than 2020-01-30 |  |
| 70 | Tworzenie raportów z postępu projektu 12 | 1d | 2020-02-06 | 2020-02-06 |  | start no earlier than 2020-02-06 |  |
| 71 | Tworzenie raportów z postępu projektu 13 | 1d | 2020-02-13 | 2020-02-13 |  | start no earlier than 2020-02-13 |  |
| 72 | Tworzenie raportów z postępu projektu 14 | 1d | 2020-02-20 | 2020-02-20 |  | start no earlier than 2020-02-20 |  |
| 73 | Tworzenie raportów z postępu projektu 15 | 1d | 2020-02-27 | 2020-02-27 |  | start no earlier than 2020-02-27 |  |
| 74 | Tworzenie raportów z postępu projektu 16 | 1d | 2020-03-05 | 2020-03-05 |  | start no earlier than 2020-03-05 |  |
| 75 | Tworzenie raportów z postępu projektu 17 | 1d | 2020-03-12 | 2020-03-12 |  | start no earlier than 2020-03-12 |  |
| 76 | Tworzenie raportów z postępu projektu 18 | 1d | 2020-03-19 | 2020-03-19 |  | start no earlier than 2020-03-19 |  |
| 77 | Tworzenie raportów z postępu projektu 19 | 1d | 2020-03-26 | 2020-03-26 |  | start no earlier than 2020-03-26 |  |
| 78 | Tworzenie raportów z postępu projektu 20 | 1d | 2020-04-02 | 2020-04-02 |  | start no earlier than 2020-04-02 |  |
| 127 | **Prowadzenie dokumentacji** | 69d | 2019-12-13 | 2020-03-27 |  |  |  |
| 128 | Prowadzenie dokumentacji 1 | 1d | 2019-12-13 | 2019-12-13 | 112SS | start no earlier than 2019-12-13 |  |
| 129 | Prowadzenie dokumentacji 2 | 1d | 2019-12-20 | 2019-12-20 |  | start no earlier than 2019-12-20 |  |
| 130 | Prowadzenie dokumentacji 3 | 1d | 2020-01-03 | 2020-01-03 |  | start no earlier than 2020-01-03 |  |
| 131 | Prowadzenie dokumentacji 4 | 1d | 2020-01-10 | 2020-01-10 |  | start no earlier than 2020-01-10 |  |
| 132 | Prowadzenie dokumentacji 5 | 1d | 2020-01-17 | 2020-01-17 |  | start no earlier than 2020-01-17 |  |
| 133 | Prowadzenie dokumentacji 6 | 1d | 2020-01-24 | 2020-01-24 |  | start no earlier than 2020-01-24 |  |
| 134 | Prowadzenie dokumentacji 7 | 1d | 2020-01-31 | 2020-01-31 |  | start no earlier than 2020-01-31 |  |
| 135 | Prowadzenie dokumentacji 8 | 1d | 2020-02-07 | 2020-02-07 |  | start no earlier than 2020-02-07 |  |
| 136 | Prowadzenie dokumentacji 9 | 1d | 2020-02-14 | 2020-02-14 |  | start no earlier than 2020-02-14 |  |
| 137 | Prowadzenie dokumentacji 10 | 1d | 2020-02-21 | 2020-02-21 |  | start no earlier than 2020-02-21 |  |
| 138 | Prowadzenie dokumentacji 11 | 1d | 2020-02-28 | 2020-02-28 |  | start no earlier than 2020-02-28 |  |
| 139 | Prowadzenie dokumentacji 12 | 1d | 2020-03-06 | 2020-03-06 |  | start no earlier than 2020-03-06 |  |
| 140 | Prowadzenie dokumentacji 13 | 1d | 2020-03-13 | 2020-03-13 |  | start no earlier than 2020-03-13 |  |
| 141 | Prowadzenie dokumentacji 14 | 1d | 2020-03-20 | 2020-03-20 |  | start no earlier than 2020-03-20 |  |
| 142 | Prowadzenie dokumentacji 15 | 1d | 2020-03-27 | 2020-03-27 |  | start no earlier than 2020-03-27 |  |

Removed: 2 <Nowe zadanie>; 12 Tworzenie dokumentacji projektu; 15 Tworzenie raportów z postępu projektu; 64 Prowadzenie dokumentacji

Changed:

| ID | Task | Start | Finish | Duration | Total float | Predecessors | Other |
| --- | --- | --- | --- | --- | --- | --- | --- |
| 1 | **Zarządzanie projektem** |  |  | 109.5d? → 110d? |  |  |  |
| 27 | Stworzenie karty projektu |  |  |  | 0d → 0.5d |  | resources none → Project Manager Assistant |
| 28 | Zatwierdzenie karty projektu i przyjęcie do realizacji |  |  |  | 0d → 0.5d |  | resources none → Project Manager |
| 29 | Planowanie pracy |  |  |  | 0d → 0.5d |  | resources none → Project Manager |
| 30 | Rekrutacja pracowników |  |  |  | 0d → 0.5d |  | resources none → HR Manager Assistant |
| 32 | Organizacja stanowisk pracy |  |  |  | 0d → 0.5d |  | resources none → HR Manager Assistant |
| 79 | Zamknięcie projektu |  |  |  |  | 26FF, Tworzenie dokumentacji projektuFF, Tworzenie raportów z postępu projektuFF, 149 → 26FF, 149 |  |
| 108 | **Wytwarzanie oprogramowania** |  |  | 71d? → 71.5d? | 0.5d → 1d |  |  |
| 126 | Oddanie w pełni funkcjonalnej aplikacji |  |  |  |  | 115, 123, 117, 122 → 115, 123, 117, 122, 142FF |  |
| 143 | **Oddanie projektu** | 2020-03-27 → 2020-03-30 (+3d) |  |  |  |  |  |
| 144 | Przekazanie stworzonej dokumentacji | 2020-03-27 → 2020-03-30 (+3d) |  |  |  |  |  |
| 145 | Umieszczenie aplikacji na Google Play | 2020-03-27 → 2020-03-30 (+3d) |  |  |  |  |  |
| 146 | Umieszczenie aplikacji na App Store | 2020-03-27 → 2020-03-30 (+3d) |  |  |  |  |  |
| 147 | Release dla wszystkich użytkowników | 2020-04-06 → 2020-04-07 (+1d) |  |  |  |  |  |
| 148 | Wdrożenie osób utrzymujących aplikację | 2020-03-30 → 2020-03-31 (+1d) | 2020-04-06 → 2020-04-07 (+1d) |  |  |  |  |
| 149 | Oddanie projektu | 2020-04-07 → 2020-04-08 (+1d) |  |  |  |  |  |

## Version 3 (saved 2019-12-02, file Harmonogram 2.0 wip.mpp)

Note of the change: owo

Last finish 2020-04-08 → 2020-04-17 (+9d).

Removed: 98 Wytwarzanie potrzebnych do makiet dźwięków; 106 Poprawianie wymagań aplikacji w zależności od wyników testów; 116 Tworzenie testów

Changed:

| ID | Task | Start | Finish | Duration | Total float | Predecessors | Other |
| --- | --- | --- | --- | --- | --- | --- | --- |
| 1 | **Zarządzanie projektem** |  | 2020-04-08 → 2020-04-17 (+9d) | 110d? → 114d? |  |  |  |
| 2 | **Spotkanie okresowe** |  |  |  | 1d → 5d |  | resources Project Manager → none |
| 31 | Pozyskiwanie zasobów do pracy |  |  |  | 0.5d → 0d |  | resources none → HR Manager |
| 33 | Delegowanie zasobów do pracy |  |  |  |  |  | resources none → HR Manager Assistant |
| 34 | Zapewnienie możliwości stworzenia odpowiedniej architektury aplikacji |  |  |  | 1d → 11.5d |  | resources none → Project Manager Assistant |
| 36 | Tworzenie dokumentacji projektu 1 |  |  |  | 96d → 100d |  | resources none → Documentation Writer |
| 37 | Tworzenie dokumentacji projektu 2 |  |  |  | 91d → 95d |  | resources none → Documentation Writer |
| 38 | Tworzenie dokumentacji projektu 3 |  |  |  | 86d → 90d |  | resources none → Documentation Writer |
| 39 | Tworzenie dokumentacji projektu 4 |  |  |  | 81d → 85d |  | resources none → Documentation Writer |
| 40 | Tworzenie dokumentacji projektu 5 |  |  |  | 76d → 80d |  | resources none → Documentation Writer |
| 41 | Tworzenie dokumentacji projektu 6 |  |  |  | 71d → 75d |  | resources none → Documentation Writer |
| 42 | Tworzenie dokumentacji projektu 7 |  |  |  | 67d → 71d |  | resources none → Documentation Writer |
| 43 | Tworzenie dokumentacji projektu 8 |  |  |  | 63d → 67d |  | resources none → Documentation Writer |
| 44 | Tworzenie dokumentacji projektu 9 |  |  |  | 58d → 62d |  | resources none → Documentation Writer |
| 45 | Tworzenie dokumentacji projektu 10 |  |  |  | 53d → 57d |  | resources none → Documentation Writer |
| 46 | Tworzenie dokumentacji projektu 11 |  |  |  | 48d → 52d |  | resources none → Documentation Writer |
| 47 | Tworzenie dokumentacji projektu 12 |  |  |  | 43d → 47d |  | resources none → Documentation Writer |
| 48 | Tworzenie dokumentacji projektu 13 |  |  |  | 38d → 42d |  | resources none → Documentation Writer |
| 49 | Tworzenie dokumentacji projektu 14 |  |  |  | 33d → 37d |  | resources none → Documentation Writer |
| 50 | Tworzenie dokumentacji projektu 15 |  |  |  | 28d → 32d |  | resources none → Documentation Writer |
| 51 | Tworzenie dokumentacji projektu 16 |  |  |  | 23d → 27d |  | resources none → Documentation Writer |
| 52 | Tworzenie dokumentacji projektu 17 |  |  |  | 18d → 22d |  | resources none → Documentation Writer |
| 53 | Tworzenie dokumentacji projektu 18 |  |  |  | 13d → 17d |  | resources none → Documentation Writer |
| 54 | Tworzenie dokumentacji projektu 19 |  |  |  | 8d → 12d |  | resources none → Documentation Writer |
| 55 | Tworzenie dokumentacji projektu 20 |  |  |  | 3d → 7d |  | resources none → Documentation Writer |
| 56 | Organizowanie osób do testów z grupy interesariuszy | 2019-12-09 → 2020-02-03 (+56d) | 2019-12-13 → 2020-02-07 (+56d) |  | 66d → 42d |  | constraint start no earlier than 2019-12-02 → start no earlier than 2020-02-02; resources none → Project Manager Assistant |
| 57 | Przeprowadzanie testów z interesariuszami | 2019-12-16 → 2020-02-10 (+56d) | 2019-12-20 → 2020-02-14 (+56d) |  | 66d → 42d |  | constraint start no earlier than 2019-12-09 → start no earlier than 2020-02-09; resources none → Project Manager Assistant |
| 59 | Tworzenie raportów z postępu projektu 1 |  |  |  | 97d → 101d |  | resources none → Project Manager Assistant |
| 60 | Tworzenie raportów z postępu projektu 2 |  |  |  | 92d → 96d |  | resources none → Project Manager Assistant |
| 61 | Tworzenie raportów z postępu projektu 3 |  |  |  | 87d → 91d |  | resources none → Project Manager Assistant |
| 62 | Tworzenie raportów z postępu projektu 4 |  |  |  | 82d → 86d |  | resources none → Project Manager Assistant |
| 63 | Tworzenie raportów z postępu projektu 5 |  |  |  | 77d → 81d |  | resources none → Project Manager Assistant |
| 64 | Tworzenie raportów z postępu projektu 6 |  |  |  | 72d → 76d |  | resources none → Project Manager Assistant |
| 65 | Tworzenie raportów z postępu projektu 7 |  |  |  | 68d → 72d |  | resources none → Project Manager Assistant |
| 66 | Tworzenie raportów z postępu projektu 8 |  |  |  | 64d → 68d |  | resources none → Project Manager Assistant |
| 67 | Tworzenie raportów z postępu projektu 9 |  |  |  | 59d → 63d |  | resources none → Project Manager Assistant |
| 68 | Tworzenie raportów z postępu projektu 10 |  |  |  | 54d → 58d |  | resources none → Project Manager Assistant |
| 69 | Tworzenie raportów z postępu projektu 11 |  |  |  | 49d → 53d |  | resources none → Project Manager Assistant |
| 70 | Tworzenie raportów z postępu projektu 12 |  |  |  | 44d → 48d |  | resources none → Project Manager Assistant |
| 71 | Tworzenie raportów z postępu projektu 13 |  |  |  | 39d → 43d |  | resources none → Project Manager Assistant |
| 72 | Tworzenie raportów z postępu projektu 14 |  |  |  | 34d → 38d |  | resources none → Project Manager Assistant |
| 73 | Tworzenie raportów z postępu projektu 15 |  |  |  | 29d → 33d |  | resources none → Project Manager Assistant |
| 74 | Tworzenie raportów z postępu projektu 16 |  |  |  | 24d → 28d |  | resources none → Project Manager Assistant |
| 75 | Tworzenie raportów z postępu projektu 17 |  |  |  | 19d → 23d |  | resources none → Project Manager Assistant |
| 76 | Tworzenie raportów z postępu projektu 18 |  |  |  | 14d → 18d |  | resources none → Project Manager Assistant |
| 77 | Tworzenie raportów z postępu projektu 19 |  |  |  | 9d → 13d |  | resources none → Project Manager Assistant |
| 78 | Tworzenie raportów z postępu projektu 20 |  |  |  | 4d → 8d |  | resources none → Project Manager Assistant |
| 79 | Zamknięcie projektu | 2020-04-08 → 2020-04-17 (+9d) | 2020-04-08 → 2020-04-17 (+9d) |  |  |  |  |
| 82 | Dokumentowanie wiedzy książkowej |  |  |  | 38.5d → 42.5d |  | resources none → Documentation Writer |
| 83 | Research zasobów potrzebnych do badań |  |  |  | 22.5d → 0d |  | resources none → Researcher Assistant |
| 84 | Organizacja potrzenych do badań zasobów |  |  |  | 22.5d → 0d |  | resources none → Senior Researcher |
| 85 | Przeprowadzenie badań |  |  |  | 22.5d → 0d |  | resources none → Senior Researcher |
| 86 | Sporządzenie raportów z badań |  |  |  | 22.5d → 0d |  | resources none → Researcher Assistant |
| 87 | Analiza danych z badań |  |  |  | 22.5d → 0d |  | resources none → Machine Learning Engineer |
| 88 | Udokumentowanie wniosków z badań |  |  |  | 22.5d → 0d |  | resources none → Documentation Writer |
| 89 | Zebranie i spisanie podstawowych informacji o kawie dla niewdrożonych użytkowników |  |  |  | 38.5d → 42.5d |  | resources none → Content Writer |
| 90 | Zredagowanie podstawowych informacji o kawie |  |  |  | 38.5d → 42.5d |  | resources none → Content Writer |
| 92 | Specyfikacja wymagań funkcjonalnych |  |  |  | 0.5d → 11d |  | resources none → Senior Software Developer |
| 93 | Specyfikacja wymagań interfejsowych |  |  |  | 0.5d → 11d |  | resources none → Junior Software Developer |
| 94 | Specyfikacja wymagań prototypu |  |  |  | 64.5d → 68.5d |  | resources none → Junior Software Developer |
| 95 | Specyfikacja wymagań pełnej aplikacji |  |  |  | 64.5d → 68.5d |  | resources none → Junior Software Developer; Senior Software Developer |
| 96 | Tworzenie makiet |  |  |  | 0.5d → 11d |  | resources none → UI Designer |
| 97 | Zamówienie grafik i dźwięków do makiet | 2019-12-10 → 2019-12-16 (+6d) | 2020-01-14 → 2019-12-16 (-29d) | 18d? → 1d | 61.5d → 22.5d | 93, 96FF → 93, 96SS | was named Wytwarzanie potrzebnych do makiet grafik; constraint none → start no earlier than 2019-12-15; resources none → Project Manager |
| 98 | Testowanie makiet |  |  |  | 0.5d → 11d |  | resources none → UI Manual Tester |
| 99 | Zaprojektowanie systemu oceniania przepisów |  |  |  | 14d → 24.5d |  | resources none → Senior Software Developer |
| 100 | Specyfikacja wymagań bazy danych do uczenia maszynowego |  |  |  | 14d → 24.5d |  | resources none → Machine Learning Engineer |
| 101 | Projekt bazy danych do uczenia maszynowego |  |  |  | 14d → 24.5d |  | resources none → Machine Learning Engineer |
| 102 | Zaprojektowanie miniencyklopedii |  |  |  | 11.5d → 22d |  | resources none → Content Writer; Senior Researcher |
| 103 | Zaprojektowanie bazy danych dla miniencyklopedii |  |  |  | 11.5d → 22d |  | resources none → Junior Software Developer |
| 104 | Utworzenie dokumentu z projektem aplikacji |  |  |  | 0.5d → 11d |  | resources none → Documentation Writer |

| ID | Task | Start | Finish | Duration | Total float | Predecessors | Other |
| --- | --- | --- | --- | --- | --- | --- | --- |
| 105 | Zaprojektowanie działania asystenta kawy |  |  |  | 5.5d → 16d |  | resources none → Junior Software Developer |
| 106 | **Wytwarzanie oprogramowania** |  | 2020-03-27 → 2020-03-30 (+3d) | 71.5d? → 72.5d? | 1d → 11d |  |  |
| 107 | Projektowanie algorytmów dobierających przepis |  |  |  | 22.5d → 0d |  | resources none → Machine Learning Engineer |
| 108 | Tworzenie prototypów systemów dobierających przepis |  |  |  | 22.5d → 0d |  | was named Tworzenie protorypów systemów dobierających przepis; resources none → Machine Learning Engineer |
| 109 | Wybranie najlepszego prototypu |  |  |  | 22.5d → 0d |  | resources none → Senior Researcher |
| 110 | Research architektury aplikacji |  |  |  | 1d → 11.5d |  | resources none → Senior Software Developer |
| 111 | Konfiguracja architektury aplikacji |  |  |  | 1d → 11.5d |  | resources none → Senior Software Developer |
| 112 | Implementacja algorytmów dobierających przepis |  |  |  | 22.5d → 0d |  | resources none → Machine Learning Engineer |
| 113 | Implementacja makiet jako funkcjonalnego interfejsu |  |  |  | 0.5d → 11d | 111, 104 → 111, 104, 97FS+7d | resources none → Junior Software Developer |
| 114 | Testowanie funkcjonalności |  |  |  | 22.5d → 23.5d | 113FF, 111, 104, Tworzenie testówFF → 113FF, 111, 104 | resources none → Manual Tester |
| 115 | Przygotowanie prototypu aplikacji |  |  |  | 22.5d → 9.5d |  | resources none → Senior Software Developer |
| 116 | Implementacja systemu ocen przepisów | 2020-02-26 → 2020-02-28 (+2d) | 2020-03-05 → 2020-03-09 (+4d) |  | 0.5d → 0d | 113 → 112 | resources none → Junior Software Developer |
| 117 | Implementacja bazy danych do uczenia maszynowego | 2020-03-06 → 2020-03-09 (+3d) | 2020-03-10 → 2020-03-11 (+1d) |  | 0.5d → 0d |  | resources none → Machine Learning Engineer |
| 118 | Prototypowanie uczenia maszynowego | 2020-03-10 → 2020-03-12 (+2d) | 2020-03-23 → 2020-03-24 (+1d) |  | 0.5d → 0d |  | resources none → Machine Learning Engineer |
| 119 | Implementacja uczenia maszynowego | 2020-03-23 → 2020-03-25 (+2d) | 2020-03-27 → 2020-03-30 (+3d) |  | 0.5d → 0d |  | resources none → Machine Learning Engineer |
| 120 | Implementacja bazy danych miniencyklopedii |  |  |  | 31d → 35d |  | resources none → Senior Software Developer |
| 121 | Uzupełnienie bazy danych miniencyklopedii |  |  |  | 31d → 35d |  | resources none → Senior Software Developer |
| 122 | Utworzenie możliwości zdalnego umieszczania reklam w aplikacji |  | 2020-03-09 → 2020-03-17 (+8d) | 1d? → 7d | 22.5d → 9.5d |  | resources none → Senior Software Developer |
| 123 | Oddanie w pełni funkcjonalnej aplikacji | 2020-03-27 → 2020-03-30 (+3d) | 2020-03-27 → 2020-03-30 (+3d) |  |  | 113, 120, 114, 119, 139FF → 113, 120, 114, 119, 122, 139FF |  |
| 124 | **Prowadzenie dokumentacji** | 2019-12-13 → 2019-12-12 (-1d) | 2020-03-27 → 2020-03-26 (-1d) |  | 8d → 13d |  |  |
| 125 | Prowadzenie dokumentacji 1 | 2019-12-13 → 2019-12-12 (-1d) | 2019-12-13 → 2019-12-12 (-1d) |  | 76d → 81d |  | constraint start no earlier than 2019-12-13 → start no earlier than 2019-12-12; resources none → Documentation Writer |
| 126 | Prowadzenie dokumentacji 2 | 2019-12-20 → 2019-12-19 (-1d) | 2019-12-20 → 2019-12-19 (-1d) |  | 71d → 76d |  | constraint start no earlier than 2019-12-20 → start no earlier than 2019-12-19; resources none → Documentation Writer |
| 127 | Prowadzenie dokumentacji 3 | 2020-01-03 → 2020-01-02 (-1d) | 2020-01-03 → 2020-01-02 (-1d) |  | 67d → 72d |  | constraint start no earlier than 2020-01-03 → start no earlier than 2020-01-02; resources none → Documentation Writer |
| 128 | Prowadzenie dokumentacji 4 | 2020-01-10 → 2020-01-09 (-1d) | 2020-01-10 → 2020-01-09 (-1d) |  | 63d → 68d |  | constraint start no earlier than 2020-01-10 → start no earlier than 2020-01-09; resources none → Documentation Writer |
| 129 | Prowadzenie dokumentacji 5 | 2020-01-17 → 2020-01-16 (-1d) | 2020-01-17 → 2020-01-16 (-1d) |  | 58d → 63d |  | constraint start no earlier than 2020-01-17 → start no earlier than 2020-01-16; resources none → Documentation Writer |
| 130 | Prowadzenie dokumentacji 6 | 2020-01-24 → 2020-01-23 (-1d) | 2020-01-24 → 2020-01-23 (-1d) |  | 53d → 58d |  | constraint start no earlier than 2020-01-24 → start no earlier than 2020-01-23; resources none → Documentation Writer |
| 131 | Prowadzenie dokumentacji 7 | 2020-01-31 → 2020-01-30 (-1d) | 2020-01-31 → 2020-01-30 (-1d) |  | 48d → 53d |  | constraint start no earlier than 2020-01-31 → start no earlier than 2020-01-30; resources none → Documentation Writer |
| 132 | Prowadzenie dokumentacji 8 | 2020-02-07 → 2020-02-06 (-1d) | 2020-02-07 → 2020-02-06 (-1d) |  | 43d → 48d |  | constraint start no earlier than 2020-02-07 → start no earlier than 2020-02-06; resources none → Documentation Writer |
| 133 | Prowadzenie dokumentacji 9 | 2020-02-14 → 2020-02-13 (-1d) | 2020-02-14 → 2020-02-13 (-1d) |  | 38d → 43d |  | constraint start no earlier than 2020-02-14 → start no earlier than 2020-02-13; resources none → Documentation Writer |
| 134 | Prowadzenie dokumentacji 10 | 2020-02-21 → 2020-02-20 (-1d) | 2020-02-21 → 2020-02-20 (-1d) |  | 33d → 38d |  | constraint start no earlier than 2020-02-21 → start no earlier than 2020-02-20; resources none → Documentation Writer |
| 135 | Prowadzenie dokumentacji 11 | 2020-02-28 → 2020-02-27 (-1d) | 2020-02-28 → 2020-02-27 (-1d) |  | 28d → 33d |  | constraint start no earlier than 2020-02-28 → start no earlier than 2020-02-27; resources none → Documentation Writer |
| 136 | Prowadzenie dokumentacji 12 | 2020-03-06 → 2020-03-05 (-1d) | 2020-03-06 → 2020-03-05 (-1d) |  | 23d → 28d |  | constraint start no earlier than 2020-03-06 → start no earlier than 2020-03-05; resources none → Documentation Writer |
| 137 | Prowadzenie dokumentacji 13 | 2020-03-13 → 2020-03-12 (-1d) | 2020-03-13 → 2020-03-12 (-1d) |  | 18d → 23d |  | constraint start no earlier than 2020-03-13 → start no earlier than 2020-03-12; resources none → Documentation Writer |
| 138 | Prowadzenie dokumentacji 14 | 2020-03-20 → 2020-03-19 (-1d) | 2020-03-20 → 2020-03-19 (-1d) |  | 13d → 18d |  | constraint start no earlier than 2020-03-20 → start no earlier than 2020-03-19; resources none → Documentation Writer |
| 139 | Prowadzenie dokumentacji 15 | 2020-03-27 → 2020-03-26 (-1d) | 2020-03-27 → 2020-03-26 (-1d) |  | 0d → 2d |  | constraint start no earlier than 2020-03-27 → start no earlier than 2020-03-26; resources none → Documentation Writer |
| 140 | **Oddanie projektu** | 2020-03-30 → 2020-03-31 (+1d) | 2020-04-08 → 2020-04-17 (+9d) | 8d? → 11d? |  |  |  |
| 141 | Przekazanie stworzonej dokumentacji aplikacji | 2020-03-30 → 2020-03-31 (+1d) | 2020-03-30 → 2020-03-31 (+1d) |  | 0.5d → 5d |  | was named Przekazanie stworzonej dokumentacji; resources none → Documentation Writer |
| 142 | Umieszczenie aplikacji na Google Play | 2020-03-30 → 2020-03-31 (+1d) | 2020-04-06 → 2020-04-07 (+1d) |  |  |  | resources none → Senior Software Developer |
| 143 | Umieszczenie aplikacji na App Store | 2020-03-30 → 2020-03-31 (+1d) | 2020-04-06 → 2020-04-07 (+1d) |  |  |  | resources none → Senior Software Developer |
| 144 | Release dla wszystkich użytkowników |  |  | 1d? → 0d | 0d → 4d |  |  |
| 145 | Wdrożenie osób utrzymujących aplikację | 2020-03-31 → 2020-04-08 (+8d) | 2020-04-07 → 2020-04-16 (+9d) | 5.5d? → 4d | 0.5d → 0d | 141 → 141, 142, 143 | resources none → Project Manager; Senior Software Developer |
| 146 | Oddanie projektu | 2020-04-08 → 2020-04-17 (+9d) | 2020-04-08 → 2020-04-17 (+9d) | 1d? → 1d |  |  | resources none → Project Manager |

## Version 4 (saved 2019-12-02, file Harmonogram 2.0 wip.mpp)

Last finish stays 2020-04-17.

Changed:

| ID | Task | Total float | Other |
| --- | --- | --- | --- |
| 33 | Delegowanie zasobów do pracy | 84d → 88d | resources HR Manager Assistant → HR Manager |

## Version 5 (saved 2019-12-11, file III Etap - przydzielone zasoby, usunięte przeciążeia.mpp)

Note of the change: update 16.12(minor).2

Last finish 2020-04-17 → 2020-06-02 (+46d).

Added:

| ID | Task | Duration | Start | Finish | Predecessors |
| --- | --- | --- | --- | --- | --- |
| 91 | Zakończenie badań | 0d | 2020-03-16 | 2020-03-16 | 90FS+10d |
| 106 | Powstanie kompletnego projektu aplikacji | 0d | 2020-02-20 | 2020-02-20 | 105FS+5d |
| 118 | Powstanie funkcjonalnego prototypu | 0d | 2020-05-04 | 2020-05-04 | 117FS+11d |

Changed:

| ID | Task | Start | Finish | Duration | Total float | Predecessors | Other |
| --- | --- | --- | --- | --- | --- | --- | --- |
| 1 | **Zarządzanie projektem** |  | 2020-04-17 → 2020-06-02 (+46d) | 114d? → 145d? |  |  |  |
| 2 | **Spotkanie okresowe** |  |  | 108d → 107.25d | 5d → 36.75d |  |  |
| 3 | Spotkanie okresowe 1 |  |  | 1d → 0.25d | 112d → 143.75d |  |  |
| 4 | Spotkanie okresowe 2 |  |  | 1d → 0.25d | 107d → 138.75d |  |  |
| 5 | Spotkanie okresowe 3 |  |  | 1d → 0.25d | 103d → 134.75d |  |  |
| 6 | Spotkanie okresowe 4 |  |  | 1d → 0.25d | 98d → 129.75d |  |  |
| 7 | Spotkanie okresowe 5 |  |  | 1d → 0.25d | 93d → 124.75d |  |  |
| 8 | Spotkanie okresowe 6 |  |  | 1d → 0.25d | 88d → 119.75d |  |  |
| 9 | Spotkanie okresowe 7 |  |  | 1d → 0.25d | 83d → 114.75d |  |  |
| 10 | Spotkanie okresowe 8 |  |  | 1d → 0.25d | 78d → 109.75d |  |  |
| 11 | Spotkanie okresowe 9 |  |  | 1d → 0.25d | 73d → 104.75d |  |  |
| 12 | Spotkanie okresowe 10 |  |  | 1d → 0.25d | 70d → 101.75d |  |  |
| 13 | Spotkanie okresowe 11 |  |  | 1d → 0.25d | 65d → 96.75d |  |  |
| 14 | Spotkanie okresowe 12 |  |  | 1d → 0.25d | 60d → 91.75d |  |  |
| 15 | Spotkanie okresowe 13 |  |  | 1d → 0.25d | 55d → 86.75d |  |  |
| 16 | Spotkanie okresowe 14 |  |  | 1d → 0.25d | 50d → 81.75d |  |  |
| 17 | Spotkanie okresowe 15 |  |  | 1d → 0.25d | 45d → 76.75d |  |  |
| 18 | Spotkanie okresowe 16 |  |  | 1d → 0.25d | 40d → 71.75d |  |  |
| 19 | Spotkanie okresowe 17 |  |  | 1d → 0.25d | 35d → 66.75d |  |  |
| 20 | Spotkanie okresowe 18 |  |  | 1d → 0.25d | 30d → 61.75d |  |  |
| 21 | Spotkanie okresowe 19 |  |  | 1d → 0.25d | 25d → 56.75d |  |  |
| 22 | Spotkanie okresowe 20 |  |  | 1d → 0.25d | 20d → 51.75d |  |  |
| 23 | Spotkanie okresowe 21 |  |  | 1d → 0.25d | 15d → 46.75d |  |  |
| 24 | Spotkanie okresowe 22 |  |  | 1d → 0.25d | 10d → 41.75d |  |  |
| 25 | Spotkanie okresowe 23 |  |  | 1d → 0.25d | 5d → 36.75d |  |  |
| 26 | Zarządzanie projektem |  | 2020-03-31 → 2020-06-02 (+63d) | 104d? → 145d | 6d → 0d | none → 27SS, 79FF | resources none → Lokal |
| 27 | Stworzenie karty projektu |  |  |  |  |  | resources Project Manager Assistant → Project Manager Assistant; PC |
| 28 | Zatwierdzenie karty projektu i przyjęcie do realizacji | 2019-11-08 → 2019-11-13 (+5d) | 2019-11-08 → 2019-11-13 (+5d) |  |  | 27 → 27FS+2d |  |
| 29 | Planowanie pracy | 2019-11-12 → 2019-11-14 (+2d) | 2019-11-29 → 2019-11-28 (-1d) | 14d → 10.5d | 0d → 6d |  | resources Project Manager → Project Manager; PC; OS; Oprogramowanie |
| 30 | Rekrutacja pracowników | 2019-11-12 → 2019-11-14 (+2d) | 2019-11-29 → 2019-12-03 (+4d) |  | 0d → 3d |  | resources HR Manager Assistant → HR Manager Assistant [50%]; PC; Oprogramowanie; OS |
| 31 | Pozyskiwanie zasobów do pracy | 2019-11-12 → 2019-11-14 (+2d) | 2019-11-29 → 2019-12-03 (+4d) |  | 0d → 3d |  | resources HR Manager → HR Manager; PC; OS; Oprogramowanie |
| 32 | Organizacja stanowisk pracy | 2019-11-12 → 2019-11-14 (+2d) | 2019-11-29 → 2019-12-03 (+4d) |  |  |  | resources HR Manager Assistant → HR Manager Assistant [50%]; PC; Oprogramowanie; OS |
| 33 | Delegowanie zasobów do pracy | 2019-12-02 → 2019-12-04 (+2d) | 2019-12-03 → 2019-12-05 (+2d) |  | 88d → 117d |  | resources HR Manager → HR Manager Assistant; PC; Oprogramowanie; OS |
| 34 | Zapewnienie możliwości stworzenia odpowiedniej architektury aplikacji | 2019-12-16 → 2019-12-30 (+14d) | 2020-01-14 → 2020-01-27 (+13d) | 14d? → 15d? | 11.5d → 7.5d |  | resources Project Manager Assistant → Project Manager Assistant; PC; OS; Oprogramowanie |
| 36 | Tworzenie dokumentacji projektu 1 |  |  |  | 100d → 131d |  | resources Documentation Writer → Documentation Writer; PC; Oprogramowanie; OS |
| 37 | Tworzenie dokumentacji projektu 2 |  |  |  | 95d → 126d |  | resources Documentation Writer → Documentation Writer; PC; Oprogramowanie; OS |
| 38 | Tworzenie dokumentacji projektu 3 |  |  |  | 90d → 121d |  | resources Documentation Writer → Documentation Writer; PC; Oprogramowanie; OS |
| 39 | Tworzenie dokumentacji projektu 4 |  |  |  | 85d → 116d |  | resources Documentation Writer → Documentation Writer; PC; Oprogramowanie; OS |
| 40 | Tworzenie dokumentacji projektu 5 |  |  |  | 80d → 111d |  | resources Documentation Writer → Documentation Writer; PC; Oprogramowanie; OS |
| 41 | Tworzenie dokumentacji projektu 6 |  |  |  | 75d → 106d |  | resources Documentation Writer → Documentation Writer; PC; Oprogramowanie; OS |
| 42 | Tworzenie dokumentacji projektu 7 |  |  |  | 71d → 102d |  | resources Documentation Writer → Documentation Writer; PC; Oprogramowanie; OS |
| 43 | Tworzenie dokumentacji projektu 8 |  |  |  | 67d → 98d |  | resources Documentation Writer → Documentation Writer; PC; Oprogramowanie; OS |
| 44 | Tworzenie dokumentacji projektu 9 |  |  |  | 62d → 93d |  | resources Documentation Writer → Documentation Writer; PC; Oprogramowanie; OS |
| 45 | Tworzenie dokumentacji projektu 10 |  |  |  | 57d → 88d |  | resources Documentation Writer → Documentation Writer; PC; Oprogramowanie; OS |
| 46 | Tworzenie dokumentacji projektu 11 |  |  |  | 52d → 83d |  | resources Documentation Writer → Documentation Writer; PC; Oprogramowanie; OS |
| 47 | Tworzenie dokumentacji projektu 12 |  |  |  | 47d → 78d |  | resources Documentation Writer → Documentation Writer; PC; Oprogramowanie; OS |
| 48 | Tworzenie dokumentacji projektu 13 |  |  |  | 42d → 73d |  | resources Documentation Writer → Documentation Writer; PC; Oprogramowanie; OS |
| 49 | Tworzenie dokumentacji projektu 14 |  |  |  | 37d → 68d |  | resources Documentation Writer → Documentation Writer; PC; Oprogramowanie; OS |
| 50 | Tworzenie dokumentacji projektu 15 |  |  |  | 32d → 63d |  | resources Documentation Writer → Documentation Writer; PC; Oprogramowanie; OS |
| 51 | Tworzenie dokumentacji projektu 16 |  |  |  | 27d → 58d |  | resources Documentation Writer → Documentation Writer; PC; Oprogramowanie; OS |
| 52 | Tworzenie dokumentacji projektu 17 |  |  |  | 22d → 53d |  | resources Documentation Writer → Documentation Writer; PC; Oprogramowanie; OS |
| 53 | Tworzenie dokumentacji projektu 18 |  |  |  | 17d → 48d |  | resources Documentation Writer → Documentation Writer; PC; Oprogramowanie; OS |
| 54 | Tworzenie dokumentacji projektu 19 |  |  |  | 12d → 43d |  | resources Documentation Writer → Documentation Writer; PC; Oprogramowanie; OS |
| 55 | Tworzenie dokumentacji projektu 20 |  |  |  | 7d → 38d |  | resources Documentation Writer → Documentation Writer; PC; Oprogramowanie; OS |
| 56 | Organizowanie osób do testów z grupy interesariuszy |  | 2020-02-07 → 2020-02-10 (+3d) |  | 42d → 55d |  | resources Project Manager Assistant → Project Manager Assistant; PC; OS; Oprogramowanie |
| 57 | Przeprowadzanie testów z interesariuszami | 2020-02-10 → 2020-02-11 (+1d) | 2020-02-14 → 2020-02-18 (+4d) |  | 42d → 55d |  | resources Project Manager Assistant → Project Manager Assistant; PC; Oprogramowanie; OS |
| 59 | Tworzenie raportów z postępu projektu 1 |  |  |  | 101d → 132d |  | resources Project Manager Assistant → Project Manager Assistant; PC; OS; Oprogramowanie |
| 60 | Tworzenie raportów z postępu projektu 2 |  |  |  | 96d → 127d |  | resources Project Manager Assistant → Project Manager Assistant; PC; OS; Oprogramowanie |
| 61 | Tworzenie raportów z postępu projektu 3 |  |  |  | 91d → 122d |  | resources Project Manager Assistant → Project Manager Assistant; PC; OS; Oprogramowanie |
| 62 | Tworzenie raportów z postępu projektu 4 |  |  |  | 86d → 117d |  | resources Project Manager Assistant → Project Manager Assistant; PC; OS; Oprogramowanie |
| 63 | Tworzenie raportów z postępu projektu 5 |  |  |  | 81d → 112d |  | resources Project Manager Assistant → Project Manager Assistant; PC; OS; Oprogramowanie |
| 64 | Tworzenie raportów z postępu projektu 6 |  |  |  | 76d → 107d |  | resources Project Manager Assistant → Project Manager Assistant; PC; OS; Oprogramowanie |
| 65 | Tworzenie raportów z postępu projektu 7 |  |  |  | 72d → 103d |  | resources Project Manager Assistant → Project Manager Assistant; PC; OS; Oprogramowanie |
| 66 | Tworzenie raportów z postępu projektu 8 |  |  |  | 68d → 99d |  | resources Project Manager Assistant → Project Manager Assistant; PC; OS; Oprogramowanie |
| 67 | Tworzenie raportów z postępu projektu 9 |  |  |  | 63d → 94d |  | resources Project Manager Assistant → Project Manager Assistant; PC; OS; Oprogramowanie |
| 68 | Tworzenie raportów z postępu projektu 10 |  |  |  | 58d → 89d |  | resources Project Manager Assistant → Project Manager Assistant; PC; OS; Oprogramowanie |
| 69 | Tworzenie raportów z postępu projektu 11 |  |  |  | 53d → 84d |  | resources Project Manager Assistant → Project Manager Assistant; PC; OS; Oprogramowanie |
| 70 | Tworzenie raportów z postępu projektu 12 |  |  |  | 48d → 79d |  | resources Project Manager Assistant → Project Manager Assistant; PC; OS; Oprogramowanie |
| 71 | Tworzenie raportów z postępu projektu 13 |  |  |  | 43d → 74d |  | resources Project Manager Assistant → Project Manager Assistant; PC; OS; Oprogramowanie |
| 72 | Tworzenie raportów z postępu projektu 14 |  |  |  | 38d → 69d |  | resources Project Manager Assistant → Project Manager Assistant; PC; OS; Oprogramowanie |

| ID | Task | Start | Finish | Duration | Total float | Predecessors | Other |
| --- | --- | --- | --- | --- | --- | --- | --- |
| 73 | Tworzenie raportów z postępu projektu 15 |  |  |  | 33d → 64d |  | resources Project Manager Assistant → Project Manager Assistant; PC; OS; Oprogramowanie |
| 74 | Tworzenie raportów z postępu projektu 16 |  |  |  | 28d → 59d |  | resources Project Manager Assistant → Project Manager Assistant; PC; OS; Oprogramowanie |
| 75 | Tworzenie raportów z postępu projektu 17 |  |  |  | 23d → 54d |  | resources Project Manager Assistant → Project Manager Assistant; PC; OS; Oprogramowanie |
| 76 | Tworzenie raportów z postępu projektu 18 |  |  |  | 18d → 49d |  | resources Project Manager Assistant → Project Manager Assistant; PC; OS; Oprogramowanie |
| 77 | Tworzenie raportów z postępu projektu 19 |  |  |  | 13d → 44d |  | resources Project Manager Assistant → Project Manager Assistant; PC; OS; Oprogramowanie |
| 78 | Tworzenie raportów z postępu projektu 20 |  |  |  | 8d → 39d |  | resources Project Manager Assistant → Project Manager Assistant; PC; OS; Oprogramowanie |
| 79 | Zamknięcie projektu | 2020-04-17 → 2020-06-02 (+46d) | 2020-04-17 → 2020-06-02 (+46d) |  |  | 26FF, 149 → 149FS+5d |  |
| 80 | Utworzenie zespołu projektowego | 2019-11-29 → 2019-12-06 (+7d) | 2019-11-29 → 2019-12-06 (+7d) |  |  | 32, 31, 30, 29 → 32FS+3d, 31, 30, 29 |  |
| 81 | **Prowadzenie badań** | 2019-12-02 → 2019-12-09 (+7d) | 2020-02-14 → 2020-03-16 (+31d) | 47.5d? → 63.5d? | 0d → 12d |  |  |
| 82 | Dokumentowanie wiedzy książkowej | 2019-12-02 → 2019-12-09 (+7d) | 2019-12-20 → 2020-01-15 (+26d) |  | 42.5d → 14.5d |  | resources Documentation Writer → Documentation Writer; PC; OS; Oprogramowanie; Książki o kawie |
| 83 | Research zasobów potrzebnych do badań | 2019-12-02 → 2019-12-09 (+7d) | 2019-12-02 → 2019-12-09 (+7d) |  | 0d → 12d |  | resources Researcher Assistant → Researcher Assistant; PC; Oprogramowanie; OS |
| 84 | Organizacja potrzenych do badań zasobów | 2019-12-03 → 2019-12-10 (+7d) | 2019-12-06 → 2019-12-16 (+10d) |  | 0d → 12d |  | resources Senior Researcher → Project Manager Assistant; PC; OS; Oprogramowanie |
| 85 | Przeprowadzenie badań | 2019-12-09 → 2019-12-18 (+9d) | 2020-01-07 → 2020-01-16 (+9d) | 15d? → 22d? | 0d → 12d |  | resources Senior Researcher → Senior Researcher; Kawa; Sprzęt do kawy; Książki o kawie |
| 86 | Sporządzenie raportów z badań | 2020-01-08 → 2020-01-17 (+9d) | 2020-01-13 → 2020-01-22 (+9d) |  | 0d → 12d |  | resources Researcher Assistant → Researcher Assistant; PC; Oprogramowanie; OS |
| 87 | Analiza danych z badań | 2020-01-14 → 2020-01-23 (+9d) | 2020-01-21 → 2020-01-30 (+9d) |  | 0d → 14.5d |  | resources Machine Learning Engineer → Machine Learning Engineer; PC; Oprogramowanie; OS |
| 88 | Udokumentowanie wniosków z badań | 2020-01-14 → 2020-01-23 (+9d) | 2020-01-21 → 2020-02-04 (+14d) |  | 0d → 12d |  | resources Documentation Writer → Documentation Writer; PC; OS; Oprogramowanie |
| 89 | Zebranie i spisanie podstawowych informacji o kawie dla niewdrożonych użytkowników | 2019-12-30 → 2020-01-16 (+17d) | 2020-01-15 → 2020-01-30 (+15d) |  | 42.5d → 21.5d |  | resources Content Writer → Content Writer; PC; OS; Oprogramowanie; Książki o kawie |
| 90 | Zredagowanie podstawowych informacji o kawie | 2020-01-15 → 2020-01-30 (+15d) | 2020-02-14 → 2020-03-02 (+17d) |  | 42.5d → 21.5d |  | resources Content Writer → Content Writer; PC; OS; Oprogramowanie; Książki o kawie |
| 92 | **Projektowanie oprogramowania** | 2019-12-02 → 2019-12-09 (+7d) | 2020-01-21 → 2020-02-20 (+30d) | 29.5d? → 46.5d? | 11d → 0d |  |  |
| 93 | Specyfikacja wymagań funkcjonalnych | 2019-12-02 → 2019-12-09 (+7d) | 2019-12-04 → 2019-12-11 (+7d) |  | 11d → 0d |  | resources Senior Software Developer → Senior Software Developer; Oprogramowanie; PC; OS |
| 94 | Specyfikacja wymagań interfejsowych | 2019-12-05 → 2019-12-12 (+7d) | 2019-12-10 → 2019-12-17 (+7d) |  | 11d → 7.5d |  | resources Junior Software Developer → Junior Software Developer; PC; OS; Oprogramowanie |
| 95 | Specyfikacja wymagań prototypu | 2019-12-10 → 2019-12-17 (+7d) | 2019-12-19 → 2020-01-03 (+15d) | 7d? → 10.5d? | 68.5d → 11d |  | resources Junior Software Developer → Junior Software Developer; PC; OS; Oprogramowanie |
| 96 | Specyfikacja wymagań pełnej aplikacji | 2019-12-19 → 2020-01-03 (+15d) | 2020-01-09 → 2020-01-16 (+7d) | 8d? → 9d? | 68.5d → 11d |  | resources Junior Software Developer; Senior Software Developer → Junior Software Developer; Senior Software Developer; PC [200%]; OS [200%]; Oprogramowanie [200%] |
| 97 | Tworzenie makiet | 2019-12-10 → 2020-01-07 (+28d) | 2020-01-14 → 2020-01-31 (+17d) |  | 11d → 0d |  | resources UI Designer → UI Designer; PC; OS; Oprogramowanie; Telefony |
| 98 | Zamówienie grafik i dźwięków do makiet | 2019-12-16 → 2020-01-07 (+22d) | 2019-12-16 → 2020-01-08 (+23d) |  | 22.5d → 26d |  | resources Project Manager → Project Manager; PC; OS; Oprogramowanie; Koszt zamówienia dźwięków; Koszt zamówienia grafik |
| 99 | Testowanie makiet | 2019-12-10 → 2020-01-07 (+28d) | 2020-01-14 → 2020-01-31 (+17d) |  | 11d → 0d |  | resources UI Manual Tester → UI Manual Tester; OS; PC; Oprogramowanie; Telefony |
| 100 | Zaprojektowanie systemu oceniania przepisów | 2019-12-05 → 2019-12-12 (+7d) | 2019-12-06 → 2019-12-13 (+7d) |  | 24.5d → 20.5d |  | resources Senior Software Developer → Senior Software Developer; PC; OS; Oprogramowanie |
| 101 | Specyfikacja wymagań bazy danych do uczenia maszynowego | 2019-12-09 → 2019-12-16 (+7d) | 2019-12-10 → 2019-12-17 (+7d) |  | 24.5d → 20.5d |  | resources Machine Learning Engineer → Machine Learning Engineer; PC; OS; Oprogramowanie |
| 102 | Projekt bazy danych do uczenia maszynowego | 2019-12-11 → 2019-12-18 (+7d) | 2019-12-16 → 2019-12-30 (+14d) | 4d? → 6d? | 24.5d → 20.5d |  | resources Machine Learning Engineer → Machine Learning Engineer; PC; OS; Oprogramowanie |
| 103 | Zaprojektowanie miniencyklopedii | 2019-12-05 → 2019-12-12 (+7d) | 2019-12-10 → 2019-12-17 (+7d) |  | 22d → 3d |  | resources Content Writer; Senior Researcher → Content Writer; Senior Researcher; Telefony [200%]; OS [200%]; PC [200%]; Oprogramowanie [200%] |
| 104 | Zaprojektowanie bazy danych dla miniencyklopedii | 2019-12-11 → 2020-01-20 (+40d) | 2019-12-19 → 2020-01-28 (+40d) |  | 22d → 3d |  | resources Junior Software Developer → Junior Software Developer; PC; OS; Oprogramowanie; Telefony |
| 105 | Utworzenie dokumentu z projektem aplikacji | 2020-01-14 → 2020-02-05 (+22d) | 2020-01-21 → 2020-02-13 (+23d) |  | 11d → 0d | 97, 99, 102, 104 → 97, 99, 102, 104, 96 | resources Documentation Writer → Documentation Writer; PC; OS; Oprogramowanie |
| 107 | Zaprojektowanie działania asystenta kawy | 2019-12-05 → 2019-12-16 (+11d) | 2019-12-19 → 2020-01-23 (+35d) | 10.5d? → 11.5d? | 16d → 0d |  | resources Junior Software Developer → Senior Software Developer [50%]; PC; OS; Oprogramowanie; Telefony |
| 108 | **Wytwarzanie oprogramowania** | 2019-12-10 → 2019-12-17 (+7d) | 2020-03-30 → 2020-05-11 (+42d) | 72.5d? → 93.5d? | 11d → 7.5d |  |  |
| 109 | Projektowanie algorytmów dobierających przepis | 2020-01-22 → 2020-02-05 (+14d) | 2020-01-28 → 2020-02-11 (+14d) |  | 0d → 12d |  | resources Machine Learning Engineer → Machine Learning Engineer; PC; OS; Oprogramowanie |
| 110 | Tworzenie prototypów systemów dobierających przepis | 2020-01-29 → 2020-02-12 (+14d) | 2020-02-14 → 2020-02-28 (+14d) |  | 0d → 12d |  | resources Machine Learning Engineer → Machine Learning Engineer; OS; PC; Oprogramowanie; Telefony |
| 111 | Wybranie najlepszego prototypu | 2020-02-14 → 2020-02-28 (+14d) | 2020-02-18 → 2020-03-03 (+14d) |  | 0d → 12d |  | resources Senior Researcher → Senior Researcher; PC; OS; Oprogramowanie; Telefony |
| 112 | Research architektury aplikacji | 2019-12-10 → 2019-12-17 (+7d) | 2019-12-16 → 2019-12-30 (+14d) | 4d? → 4.5d? | 11.5d → 7.5d |  | resources Senior Software Developer → Senior Software Developer; OS; PC; Oprogramowanie |
| 113 | Konfiguracja architektury aplikacji | 2020-01-14 → 2020-01-27 (+13d) | 2020-01-20 → 2020-01-31 (+11d) |  | 11.5d → 8.5d |  | resources Senior Software Developer → Senior Software Developer; PC; OS; Oprogramowanie |
| 114 | Implementacja algorytmów dobierających przepis | 2020-02-19 → 2020-03-04 (+14d) | 2020-02-27 → 2020-03-12 (+14d) |  | 0d → 12d |  | resources Machine Learning Engineer → Machine Learning Engineer; PC; OS; Oprogramowanie; Telefony |
| 115 | Implementacja makiet jako funkcjonalnego interfejsu | 2020-01-21 → 2020-02-13 (+23d) | 2020-02-26 → 2020-03-30 (+33d) |  | 11d → 0d | 113, 105, 98FS+7d → 113, 105, 98 | resources Junior Software Developer → Junior Software Developer; PC; OS; Oprogramowanie; Telefony |
| 116 | Testowanie funkcjonalności | 2020-01-21 → 2020-02-20 (+30d) | 2020-02-26 → 2020-03-27 (+30d) |  | 23.5d → 27.3d | 115FF, 113, 105 → 115SS+2%, 113, 105 | resources Manual Tester → Manual Tester; PC; OS; Oprogramowanie; Telefony |
| 117 | Przygotowanie prototypu aplikacji | 2020-02-28 → 2020-04-06 (+38d) | 2020-03-06 → 2020-04-16 (+41d) | 5.5d? → 8.5d? | 9.5d → 0d |  | resources Senior Software Developer → Senior Software Developer; Telefony; PC; OS; Oprogramowanie |
| 119 | Implementacja systemu ocen przepisów | 2020-02-28 → 2020-03-13 (+14d) | 2020-03-09 → 2020-03-23 (+14d) |  | 0d → 16d |  | resources Junior Software Developer → Junior Software Developer; PC; OS; Oprogramowanie |
| 120 | Implementacja bazy danych do uczenia maszynowego | 2020-03-09 → 2020-03-23 (+14d) | 2020-03-11 → 2020-03-25 (+14d) |  | 0d → 16d |  | resources Machine Learning Engineer → Machine Learning Engineer; PC; OS; Oprogramowanie |
| 121 | Prototypowanie uczenia maszynowego | 2020-03-12 → 2020-03-26 (+14d) | 2020-03-24 → 2020-04-07 (+14d) |  | 0d → 16d |  | resources Machine Learning Engineer → Machine Learning Engineer; PC; OS; Oprogramowanie |
| 122 | Implementacja uczenia maszynowego | 2020-03-25 → 2020-04-08 (+14d) | 2020-03-30 → 2020-04-16 (+17d) | 4d? → 7d? | 0d → 16d |  | resources Machine Learning Engineer → Machine Learning Engineer; PC; OS; Oprogramowanie |
| 123 | Implementacja bazy danych miniencyklopedii | 2020-01-21 → 2020-02-20 (+30d) | 2020-02-04 → 2020-03-05 (+30d) |  | 35d → 28d | 105 → 106 | resources Senior Software Developer → Senior Software Developer; PC; OS; Oprogramowanie |
| 124 | Uzupełnienie bazy danych miniencyklopedii | 2020-02-05 → 2020-03-16 (+40d) | 2020-02-25 → 2020-04-06 (+41d) |  | 35d → 21.5d | 123 → 123, 91 | resources Senior Software Developer → Senior Software Developer; PC; OS; Oprogramowanie |
| 125 | Utworzenie możliwości zdalnego umieszczania reklam w aplikacji | 2020-03-06 → 2020-04-17 (+42d) | 2020-03-17 → 2020-04-27 (+41d) |  | 9.5d → 0d |  | resources Senior Software Developer → Senior Software Developer; Telefony; PC; OS; Oprogramowanie |
| 126 | Oddanie w pełni funkcjonalnej aplikacji | 2020-03-30 → 2020-05-11 (+42d) | 2020-03-30 → 2020-05-11 (+42d) |  |  | 115, 123, 116, 122, 125, 142FF → 115, 123, 116, 122, 125FS+9d, 142FF, 124, 57 |  |
| 127 | **Prowadzenie dokumentacji** | 2019-12-12 → 2019-12-17 (+5d) |  | 69d → 65d | 13d → 44.5d |  |  |
| 128 | Prowadzenie dokumentacji 1 | 2019-12-12 → 2019-12-17 (+5d) | 2019-12-12 → 2019-12-17 (+5d) | 1d → 0.5d | 81d → 109d |  | resources Documentation Writer → Documentation Writer; PC; OS; Oprogramowanie |
| 129 | Prowadzenie dokumentacji 2 |  |  | 1d → 0.5d | 76d → 107.5d |  | resources Documentation Writer → Documentation Writer; PC; OS; Oprogramowanie |
| 130 | Prowadzenie dokumentacji 3 |  |  | 1d → 0.5d | 72d → 103.5d |  | resources Documentation Writer → Documentation Writer; PC; OS; Oprogramowanie |
| 131 | Prowadzenie dokumentacji 4 |  |  | 1d → 0.5d | 68d → 99.5d |  | resources Documentation Writer → Documentation Writer; PC; OS; Oprogramowanie |
| 132 | Prowadzenie dokumentacji 5 |  |  | 1d → 0.5d | 63d → 94.5d |  | resources Documentation Writer → Documentation Writer; PC; OS; Oprogramowanie |
| 133 | Prowadzenie dokumentacji 6 |  |  | 1d → 0.5d | 58d → 89.5d |  | resources Documentation Writer → Documentation Writer; PC; OS; Oprogramowanie |
| 134 | Prowadzenie dokumentacji 7 |  |  | 1d → 0.5d | 53d → 84.5d |  | resources Documentation Writer → Documentation Writer; PC; OS; Oprogramowanie |
| 135 | Prowadzenie dokumentacji 8 |  |  | 1d → 0.5d | 48d → 79.5d |  | resources Documentation Writer → Documentation Writer; PC; OS; Oprogramowanie |
| 136 | Prowadzenie dokumentacji 9 |  |  | 1d → 0.5d | 43d → 74.5d |  | resources Documentation Writer → Documentation Writer; PC; OS; Oprogramowanie |
| 137 | Prowadzenie dokumentacji 10 |  |  | 1d → 0.5d | 38d → 69.5d |  | resources Documentation Writer → Documentation Writer; PC; OS; Oprogramowanie |
| 138 | Prowadzenie dokumentacji 11 |  |  | 1d → 0.5d | 33d → 64.5d |  | resources Documentation Writer → Documentation Writer; PC; OS; Oprogramowanie |
| 139 | Prowadzenie dokumentacji 12 |  |  | 1d → 0.5d | 28d → 59.5d |  | resources Documentation Writer → Documentation Writer; PC; OS; Oprogramowanie |
| 140 | Prowadzenie dokumentacji 13 |  |  | 1d → 0.5d | 23d → 54.5d |  | resources Documentation Writer → Documentation Writer; PC; OS; Oprogramowanie |
| 141 | Prowadzenie dokumentacji 14 |  |  | 1d → 0.5d | 18d → 49.5d |  | resources Documentation Writer → Documentation Writer; PC; OS; Oprogramowanie |
| 142 | Prowadzenie dokumentacji 15 |  |  | 1d → 0.5d | 2d → 28.5d |  | resources Documentation Writer → Documentation Writer; PC; OS; Oprogramowanie |
| 143 | **Oddanie projektu** | 2020-03-31 → 2020-05-12 (+42d) | 2020-04-17 → 2020-05-26 (+39d) |  |  |  |  |
| 144 | Przekazanie stworzonej dokumentacji aplikacji | 2020-03-31 → 2020-05-12 (+42d) | 2020-03-31 → 2020-05-12 (+42d) |  |  |  | resources Documentation Writer → Documentation Writer; OS; PC; Oprogramowanie |
| 145 | Umieszczenie aplikacji na Google Play | 2020-03-31 → 2020-05-12 (+42d) | 2020-04-07 → 2020-05-19 (+42d) |  |  |  | resources Senior Software Developer → Senior Software Developer [50%]; OS; PC; Oprogramowanie; Telefony |

| ID | Task | Start | Finish | Total float | Predecessors | Other |
| --- | --- | --- | --- | --- | --- | --- |
| 146 | Umieszczenie aplikacji na App Store | 2020-03-31 → 2020-05-12 (+42d) | 2020-04-07 → 2020-05-19 (+42d) |  |  | resources Senior Software Developer → Senior Software Developer [50%]; PC; OS; Oprogramowanie; Telefony |
| 147 | Release dla wszystkich użytkowników | 2020-04-07 → 2020-05-20 (+43d) | 2020-04-07 → 2020-05-20 (+43d) | 4d → 3d | 145, 146 → 145FS+1d, 146FS+1d |  |
| 148 | Wdrożenie osób utrzymujących aplikację | 2020-04-08 → 2020-05-20 (+42d) | 2020-04-16 → 2020-05-25 (+39d) |  |  | resources Project Manager; Senior Software Developer → Project Manager; Senior Software Developer; PC [200%]; OS [200%]; Oprogramowanie [200%]; Telefony [200%] |
| 149 | Oddanie projektu | 2020-04-17 → 2020-05-26 (+39d) | 2020-04-17 → 2020-05-26 (+39d) |  |  |  |

## Version 6 (data date 2020-01-07, saved 2020-01-08, file III Etap - ustawiony plan bazowy pod IV etap, 0% wykonania zadań.mpp)

Note of the change: smol update 8.01

Last finish stays 2020-06-02.

Added:

| ID | Task | Duration | Start | Finish | Predecessors |
| --- | --- | --- | --- | --- | --- |
| 27 | Punkt kontrolny 1 - 30% projektu | 0d | 2020-01-07 | 2020-01-07 | 26SS+3% |
| 28 | Punkt kontorlny 2 - 50% | 0d | 2020-02-17 | 2020-02-17 | 26SS+5% |
| 29 | Punkt kontrolny 3 - 75% | 0d | 2020-04-07 | 2020-04-07 | 26SS+7.5% |
| 30 | Punkt kontrolny 4 - 100% | 0d | 2020-06-02 | 2020-06-02 | 26 |

Changed:

| ID | Task | Other |
| --- | --- | --- |
| 1 | **Zarządzanie projektem** | baseline start none → 2019-10-28; baseline finish none → 2020-06-02 |
| 2 | **Spotkanie okresowe** | baseline start none → 2019-10-29; baseline finish none → 2020-04-07 |
| 3 | Spotkanie okresowe 1 | baseline start none → 2019-10-29; baseline finish none → 2019-10-29 |
| 4 | Spotkanie okresowe 2 | baseline start none → 2019-11-05; baseline finish none → 2019-11-05 |
| 5 | Spotkanie okresowe 3 | baseline start none → 2019-11-12; baseline finish none → 2019-11-12 |
| 6 | Spotkanie okresowe 4 | baseline start none → 2019-11-19; baseline finish none → 2019-11-19 |
| 7 | Spotkanie okresowe 5 | baseline start none → 2019-11-26; baseline finish none → 2019-11-26 |
| 8 | Spotkanie okresowe 6 | baseline start none → 2019-12-03; baseline finish none → 2019-12-03 |
| 9 | Spotkanie okresowe 7 | baseline start none → 2019-12-10; baseline finish none → 2019-12-10 |
| 10 | Spotkanie okresowe 8 | baseline start none → 2019-12-17; baseline finish none → 2019-12-17 |
| 11 | Spotkanie okresowe 9 | baseline start none → 2019-12-31; baseline finish none → 2019-12-31 |
| 12 | Spotkanie okresowe 10 | baseline start none → 2020-01-07; baseline finish none → 2020-01-07 |
| 13 | Spotkanie okresowe 11 | baseline start none → 2020-01-14; baseline finish none → 2020-01-14 |
| 14 | Spotkanie okresowe 12 | baseline start none → 2020-01-21; baseline finish none → 2020-01-21 |
| 15 | Spotkanie okresowe 13 | baseline start none → 2020-01-28; baseline finish none → 2020-01-28 |
| 16 | Spotkanie okresowe 14 | baseline start none → 2020-02-04; baseline finish none → 2020-02-04 |
| 17 | Spotkanie okresowe 15 | baseline start none → 2020-02-11; baseline finish none → 2020-02-11 |
| 18 | Spotkanie okresowe 16 | baseline start none → 2020-02-18; baseline finish none → 2020-02-18 |
| 19 | Spotkanie okresowe 17 | baseline start none → 2020-02-25; baseline finish none → 2020-02-25 |
| 20 | Spotkanie okresowe 18 | baseline start none → 2020-03-03; baseline finish none → 2020-03-03 |
| 21 | Spotkanie okresowe 19 | baseline start none → 2020-03-10; baseline finish none → 2020-03-10 |
| 22 | Spotkanie okresowe 20 | baseline start none → 2020-03-17; baseline finish none → 2020-03-17 |
| 23 | Spotkanie okresowe 21 | baseline start none → 2020-03-24; baseline finish none → 2020-03-24 |
| 24 | Spotkanie okresowe 22 | baseline start none → 2020-03-31; baseline finish none → 2020-03-31 |
| 25 | Spotkanie okresowe 23 | baseline start none → 2020-04-07; baseline finish none → 2020-04-07 |
| 26 | Zarządzanie projektem | baseline start none → 2019-10-28; baseline finish none → 2020-06-02 |
| 31 | Stworzenie karty projektu | baseline start none → 2019-10-28; baseline finish none → 2019-11-08 |
| 32 | Zatwierdzenie karty projektu i przyjęcie do realizacji | baseline start none → 2019-11-13; baseline finish none → 2019-11-13 |
| 33 | Planowanie pracy | baseline start none → 2019-11-14; baseline finish none → 2019-11-28 |
| 34 | Rekrutacja pracowników | baseline start none → 2019-11-14; baseline finish none → 2019-12-03 |
| 35 | Pozyskiwanie zasobów do pracy | baseline start none → 2019-11-14; baseline finish none → 2019-12-03 |
| 36 | Organizacja stanowisk pracy | baseline start none → 2019-11-14; baseline finish none → 2019-12-03 |
| 37 | Delegowanie zasobów do pracy | baseline start none → 2019-12-04; baseline finish none → 2019-12-05 |
| 38 | Zapewnienie możliwości stworzenia odpowiedniej architektury aplikacji | baseline start none → 2019-12-30; baseline finish none → 2020-01-27 |
| 39 | **Tworzenie dokumentacji projektu** | baseline start none → 2019-11-15; baseline finish none → 2020-04-03 |
| 40 | Tworzenie dokumentacji projektu 1 | baseline start none → 2019-11-15; baseline finish none → 2019-11-15 |
| 41 | Tworzenie dokumentacji projektu 2 | baseline start none → 2019-11-22; baseline finish none → 2019-11-22 |
| 42 | Tworzenie dokumentacji projektu 3 | baseline start none → 2019-11-29; baseline finish none → 2019-11-29 |
| 43 | Tworzenie dokumentacji projektu 4 | baseline start none → 2019-12-06; baseline finish none → 2019-12-06 |
| 44 | Tworzenie dokumentacji projektu 5 | baseline start none → 2019-12-13; baseline finish none → 2019-12-13 |
| 45 | Tworzenie dokumentacji projektu 6 | baseline start none → 2019-12-20; baseline finish none → 2019-12-20 |
| 46 | Tworzenie dokumentacji projektu 7 | baseline start none → 2020-01-03; baseline finish none → 2020-01-03 |
| 47 | Tworzenie dokumentacji projektu 8 | baseline start none → 2020-01-10; baseline finish none → 2020-01-10 |
| 48 | Tworzenie dokumentacji projektu 9 | baseline start none → 2020-01-17; baseline finish none → 2020-01-17 |
| 49 | Tworzenie dokumentacji projektu 10 | baseline start none → 2020-01-24; baseline finish none → 2020-01-24 |
| 50 | Tworzenie dokumentacji projektu 11 | baseline start none → 2020-01-31; baseline finish none → 2020-01-31 |
| 51 | Tworzenie dokumentacji projektu 12 | baseline start none → 2020-02-07; baseline finish none → 2020-02-07 |
| 52 | Tworzenie dokumentacji projektu 13 | baseline start none → 2020-02-14; baseline finish none → 2020-02-14 |
| 53 | Tworzenie dokumentacji projektu 14 | baseline start none → 2020-02-21; baseline finish none → 2020-02-21 |
| 54 | Tworzenie dokumentacji projektu 15 | baseline start none → 2020-02-28; baseline finish none → 2020-02-28 |
| 55 | Tworzenie dokumentacji projektu 16 | baseline start none → 2020-03-06; baseline finish none → 2020-03-06 |
| 56 | Tworzenie dokumentacji projektu 17 | baseline start none → 2020-03-13; baseline finish none → 2020-03-13 |
| 57 | Tworzenie dokumentacji projektu 18 | baseline start none → 2020-03-20; baseline finish none → 2020-03-20 |
| 58 | Tworzenie dokumentacji projektu 19 | baseline start none → 2020-03-27; baseline finish none → 2020-03-27 |
| 59 | Tworzenie dokumentacji projektu 20 | baseline start none → 2020-04-03; baseline finish none → 2020-04-03 |
| 60 | Organizowanie osób do testów z grupy interesariuszy | baseline start none → 2020-02-03; baseline finish none → 2020-02-10 |
| 61 | Przeprowadzanie testów z interesariuszami | baseline start none → 2020-02-11; baseline finish none → 2020-02-18 |
| 62 | **Tworzenie raportów z postępu projektu** | baseline start none → 2019-11-14; baseline finish none → 2020-04-02 |
| 63 | Tworzenie raportów z postępu projektu 1 | baseline start none → 2019-11-14; baseline finish none → 2019-11-14 |
| 64 | Tworzenie raportów z postępu projektu 2 | baseline start none → 2019-11-21; baseline finish none → 2019-11-21 |
| 65 | Tworzenie raportów z postępu projektu 3 | baseline start none → 2019-11-28; baseline finish none → 2019-11-28 |
| 66 | Tworzenie raportów z postępu projektu 4 | baseline start none → 2019-12-05; baseline finish none → 2019-12-05 |
| 67 | Tworzenie raportów z postępu projektu 5 | baseline start none → 2019-12-12; baseline finish none → 2019-12-12 |
| 68 | Tworzenie raportów z postępu projektu 6 | baseline start none → 2019-12-19; baseline finish none → 2019-12-19 |
| 69 | Tworzenie raportów z postępu projektu 7 | baseline start none → 2020-01-02; baseline finish none → 2020-01-02 |
| 70 | Tworzenie raportów z postępu projektu 8 | baseline start none → 2020-01-09; baseline finish none → 2020-01-09 |
| 71 | Tworzenie raportów z postępu projektu 9 | baseline start none → 2020-01-16; baseline finish none → 2020-01-16 |
| 72 | Tworzenie raportów z postępu projektu 10 | baseline start none → 2020-01-23; baseline finish none → 2020-01-23 |
| 73 | Tworzenie raportów z postępu projektu 11 | baseline start none → 2020-01-30; baseline finish none → 2020-01-30 |
| 74 | Tworzenie raportów z postępu projektu 12 | baseline start none → 2020-02-06; baseline finish none → 2020-02-06 |

| ID | Task | Other |
| --- | --- | --- |
| 75 | Tworzenie raportów z postępu projektu 13 | baseline start none → 2020-02-13; baseline finish none → 2020-02-13 |
| 76 | Tworzenie raportów z postępu projektu 14 | baseline start none → 2020-02-20; baseline finish none → 2020-02-20 |
| 77 | Tworzenie raportów z postępu projektu 15 | baseline start none → 2020-02-27; baseline finish none → 2020-02-27 |
| 78 | Tworzenie raportów z postępu projektu 16 | baseline start none → 2020-03-05; baseline finish none → 2020-03-05 |
| 79 | Tworzenie raportów z postępu projektu 17 | baseline start none → 2020-03-12; baseline finish none → 2020-03-12 |
| 80 | Tworzenie raportów z postępu projektu 18 | baseline start none → 2020-03-19; baseline finish none → 2020-03-19 |
| 81 | Tworzenie raportów z postępu projektu 19 | baseline start none → 2020-03-26; baseline finish none → 2020-03-26 |
| 82 | Tworzenie raportów z postępu projektu 20 | baseline start none → 2020-04-02; baseline finish none → 2020-04-02 |
| 83 | Zamknięcie projektu | baseline start none → 2020-06-02; baseline finish none → 2020-06-02 |
| 84 | Utworzenie zespołu projektowego | baseline start none → 2019-12-06; baseline finish none → 2019-12-06 |
| 85 | **Prowadzenie badań** | baseline start none → 2019-12-09; baseline finish none → 2020-03-16 |
| 86 | Dokumentowanie wiedzy książkowej | baseline start none → 2019-12-09; baseline finish none → 2020-01-15 |
| 87 | Research zasobów potrzebnych do badań | baseline start none → 2019-12-09; baseline finish none → 2019-12-09 |
| 88 | Organizacja potrzenych do badań zasobów | baseline start none → 2019-12-10; baseline finish none → 2019-12-16 |
| 89 | Przeprowadzenie badań | baseline start none → 2019-12-18; baseline finish none → 2020-01-16 |
| 90 | Sporządzenie raportów z badań | baseline start none → 2020-01-17; baseline finish none → 2020-01-22 |
| 91 | Analiza danych z badań | baseline start none → 2020-01-23; baseline finish none → 2020-01-30 |
| 92 | Udokumentowanie wniosków z badań | baseline start none → 2020-01-23; baseline finish none → 2020-02-04 |
| 93 | Zebranie i spisanie podstawowych informacji o kawie dla niewdrożonych użytkowników | baseline start none → 2020-01-16; baseline finish none → 2020-01-30 |
| 94 | Zredagowanie podstawowych informacji o kawie | baseline start none → 2020-01-30; baseline finish none → 2020-03-02 |
| 95 | Zakończenie badań | baseline start none → 2020-03-16; baseline finish none → 2020-03-16 |
| 96 | **Projektowanie oprogramowania** | baseline start none → 2019-12-09; baseline finish none → 2020-02-20 |
| 97 | Specyfikacja wymagań funkcjonalnych | baseline start none → 2019-12-09; baseline finish none → 2019-12-11 |
| 98 | Specyfikacja wymagań interfejsowych | baseline start none → 2019-12-12; baseline finish none → 2019-12-17 |
| 99 | Specyfikacja wymagań prototypu | baseline start none → 2019-12-17; baseline finish none → 2020-01-03 |
| 100 | Specyfikacja wymagań pełnej aplikacji | baseline start none → 2020-01-03; baseline finish none → 2020-01-16 |
| 101 | Tworzenie makiet | baseline start none → 2020-01-07; baseline finish none → 2020-01-31 |
| 102 | Zamówienie grafik i dźwięków do makiet | baseline start none → 2020-01-07; baseline finish none → 2020-01-08 |
| 103 | Testowanie makiet | baseline start none → 2020-01-07; baseline finish none → 2020-01-31 |
| 104 | Zaprojektowanie systemu oceniania przepisów | baseline start none → 2019-12-12; baseline finish none → 2019-12-13 |
| 105 | Specyfikacja wymagań bazy danych do uczenia maszynowego | baseline start none → 2019-12-16; baseline finish none → 2019-12-17 |
| 106 | Projekt bazy danych do uczenia maszynowego | baseline start none → 2019-12-18; baseline finish none → 2019-12-30 |
| 107 | Zaprojektowanie miniencyklopedii | baseline start none → 2019-12-12; baseline finish none → 2019-12-17 |
| 108 | Zaprojektowanie bazy danych dla miniencyklopedii | baseline start none → 2020-01-20; baseline finish none → 2020-01-28 |
| 109 | Utworzenie dokumentu z projektem aplikacji | baseline start none → 2020-02-05; baseline finish none → 2020-02-13 |
| 110 | Powstanie kompletnego projektu aplikacji | baseline start none → 2020-02-20; baseline finish none → 2020-02-20 |
| 111 | Zaprojektowanie działania asystenta kawy | baseline start none → 2019-12-16; baseline finish none → 2020-01-23 |
| 112 | **Wytwarzanie oprogramowania** | baseline start none → 2019-12-17; baseline finish none → 2020-05-11 |
| 113 | Projektowanie algorytmów dobierających przepis | baseline start none → 2020-02-05; baseline finish none → 2020-02-11 |
| 114 | Tworzenie prototypów systemów dobierających przepis | baseline start none → 2020-02-12; baseline finish none → 2020-02-28 |
| 115 | Wybranie najlepszego prototypu | baseline start none → 2020-02-28; baseline finish none → 2020-03-03 |
| 116 | Research architektury aplikacji | baseline start none → 2019-12-17; baseline finish none → 2019-12-30 |
| 117 | Konfiguracja architektury aplikacji | baseline start none → 2020-01-27; baseline finish none → 2020-01-31 |
| 118 | Implementacja algorytmów dobierających przepis | baseline start none → 2020-03-04; baseline finish none → 2020-03-12 |
| 119 | Implementacja makiet jako funkcjonalnego interfejsu | baseline start none → 2020-02-13; baseline finish none → 2020-03-30 |
| 120 | Testowanie funkcjonalności | baseline start none → 2020-02-20; baseline finish none → 2020-03-27 |
| 121 | Przygotowanie prototypu aplikacji | baseline start none → 2020-04-06; baseline finish none → 2020-04-16 |
| 122 | Powstanie funkcjonalnego prototypu | baseline start none → 2020-05-04; baseline finish none → 2020-05-04 |
| 123 | Implementacja systemu ocen przepisów | baseline start none → 2020-03-13; baseline finish none → 2020-03-23 |
| 124 | Implementacja bazy danych do uczenia maszynowego | baseline start none → 2020-03-23; baseline finish none → 2020-03-25 |
| 125 | Prototypowanie uczenia maszynowego | baseline start none → 2020-03-26; baseline finish none → 2020-04-07 |
| 126 | Implementacja uczenia maszynowego | baseline start none → 2020-04-08; baseline finish none → 2020-04-16 |
| 127 | Implementacja bazy danych miniencyklopedii | baseline start none → 2020-02-20; baseline finish none → 2020-03-05 |
| 128 | Uzupełnienie bazy danych miniencyklopedii | baseline start none → 2020-03-16; baseline finish none → 2020-04-06 |
| 129 | Utworzenie możliwości zdalnego umieszczania reklam w aplikacji | baseline start none → 2020-04-17; baseline finish none → 2020-04-27 |
| 130 | Oddanie w pełni funkcjonalnej aplikacji | baseline start none → 2020-05-11; baseline finish none → 2020-05-11 |
| 131 | **Prowadzenie dokumentacji** | baseline start none → 2019-12-17; baseline finish none → 2020-03-26 |
| 132 | Prowadzenie dokumentacji 1 | baseline start none → 2019-12-17; baseline finish none → 2019-12-17 |
| 133 | Prowadzenie dokumentacji 2 | baseline start none → 2019-12-19; baseline finish none → 2019-12-19 |
| 134 | Prowadzenie dokumentacji 3 | baseline start none → 2020-01-02; baseline finish none → 2020-01-02 |
| 135 | Prowadzenie dokumentacji 4 | baseline start none → 2020-01-09; baseline finish none → 2020-01-09 |
| 136 | Prowadzenie dokumentacji 5 | baseline start none → 2020-01-16; baseline finish none → 2020-01-16 |
| 137 | Prowadzenie dokumentacji 6 | baseline start none → 2020-01-23; baseline finish none → 2020-01-23 |
| 138 | Prowadzenie dokumentacji 7 | baseline start none → 2020-01-30; baseline finish none → 2020-01-30 |
| 139 | Prowadzenie dokumentacji 8 | baseline start none → 2020-02-06; baseline finish none → 2020-02-06 |
| 140 | Prowadzenie dokumentacji 9 | baseline start none → 2020-02-13; baseline finish none → 2020-02-13 |
| 141 | Prowadzenie dokumentacji 10 | baseline start none → 2020-02-20; baseline finish none → 2020-02-20 |
| 142 | Prowadzenie dokumentacji 11 | baseline start none → 2020-02-27; baseline finish none → 2020-02-27 |
| 143 | Prowadzenie dokumentacji 12 | baseline start none → 2020-03-05; baseline finish none → 2020-03-05 |
| 144 | Prowadzenie dokumentacji 13 | baseline start none → 2020-03-12; baseline finish none → 2020-03-12 |

| ID | Task | Other |
| --- | --- | --- |
| 145 | Prowadzenie dokumentacji 14 | baseline start none → 2020-03-19; baseline finish none → 2020-03-19 |
| 146 | Prowadzenie dokumentacji 15 | baseline start none → 2020-03-26; baseline finish none → 2020-03-26 |
| 147 | **Oddanie projektu** | baseline start none → 2020-05-12; baseline finish none → 2020-05-26 |
| 148 | Przekazanie stworzonej dokumentacji aplikacji | baseline start none → 2020-05-12; baseline finish none → 2020-05-12 |
| 149 | Umieszczenie aplikacji na Google Play | baseline start none → 2020-05-12; baseline finish none → 2020-05-19 |
| 150 | Umieszczenie aplikacji na App Store | baseline start none → 2020-05-12; baseline finish none → 2020-05-19 |
| 151 | Release dla wszystkich użytkowników | baseline start none → 2020-05-20; baseline finish none → 2020-05-20 |
| 152 | Wdrożenie osób utrzymujących aplikację | baseline start none → 2020-05-20; baseline finish none → 2020-05-25 |
| 153 | Oddanie projektu | baseline start none → 2020-05-26; baseline finish none → 2020-05-26 |

## Version 7 (data date 2020-01-07, saved 2020-01-08, file III Etap - ustawiony plan bazowy pod IV etap, 0% wykonania zadań — kopia.mpp)

Last finish stays 2020-06-02. Complete tasks 0 → 50.

Changed:

| ID | Task | Start | Finish | Duration | Complete | Total float |
| --- | --- | --- | --- | --- | --- | --- |
| 1 | **Zarządzanie projektem** | 2019-10-28 A |  |  | 0% → 49% |  |
| 2 | **Spotkanie okresowe** | 2019-10-29 A |  |  | 0% → 43% |  |
| 3 | Spotkanie okresowe 1 | 2019-10-29 A | 2019-10-29 A |  | 0% → 100% | 143.75d → none |
| 4 | Spotkanie okresowe 2 | 2019-11-05 A | 2019-11-05 A |  | 0% → 100% | 138.75d → none |
| 5 | Spotkanie okresowe 3 | 2019-11-12 A | 2019-11-12 A |  | 0% → 100% | 134.75d → none |
| 6 | Spotkanie okresowe 4 | 2019-11-19 A | 2019-11-19 A |  | 0% → 100% | 129.75d → none |
| 7 | Spotkanie okresowe 5 | 2019-11-26 A | 2019-11-26 A |  | 0% → 100% | 124.75d → none |
| 8 | Spotkanie okresowe 6 | 2019-12-03 A | 2019-12-03 A |  | 0% → 100% | 119.75d → none |
| 9 | Spotkanie okresowe 7 | 2019-12-10 A | 2019-12-10 A |  | 0% → 100% | 114.75d → none |
| 10 | Spotkanie okresowe 8 | 2019-12-17 A | 2019-12-17 A |  | 0% → 100% | 109.75d → none |
| 11 | Spotkanie okresowe 9 | 2019-12-31 A | 2019-12-31 A |  | 0% → 100% | 104.75d → none |
| 12 | Spotkanie okresowe 10 | 2020-01-07 A | 2020-01-07 A |  | 0% → 100% | 101.75d → none |
| 26 | Zarządzanie projektem | 2019-10-28 A |  |  | 0% → 30% |  |
| 27 | Punkt kontrolny 1 - 30% projektu | 2020-01-07 A | 2020-01-07 A |  | 0% → 100% | 101.5d → none |
| 31 | Stworzenie karty projektu | 2019-10-28 A | 2019-11-08 A |  | 0% → 100% | 0d → none |
| 32 | Zatwierdzenie karty projektu i przyjęcie do realizacji | 2019-11-13 A | 2019-11-13 A |  | 0% → 100% | 0d → none |
| 33 | Planowanie pracy | 2019-11-14 A | 2019-11-28 A |  | 0% → 100% | 6d → none |
| 34 | Rekrutacja pracowników | 2019-11-14 A | 2019-12-03 A |  | 0% → 100% | 3d → none |
| 35 | Pozyskiwanie zasobów do pracy | 2019-11-14 A | 2019-12-03 A |  | 0% → 100% | 3d → none |
| 36 | Organizacja stanowisk pracy | 2019-11-14 A | 2019-12-03 A |  | 0% → 100% | 0d → none |
| 37 | Delegowanie zasobów do pracy | 2019-12-04 A | 2019-12-05 A |  | 0% → 100% | 117d → none |
| 38 | Zapewnienie możliwości stworzenia odpowiedniej architektury aplikacji | 2019-12-30 A |  |  | 0% → 75% | 7.5d → 8.5d |
| 39 | **Tworzenie dokumentacji projektu** | 2019-11-15 A |  |  | 0% → 35% |  |
| 40 | Tworzenie dokumentacji projektu 1 | 2019-11-15 A | 2019-11-15 A |  | 0% → 100% | 131d → none |
| 41 | Tworzenie dokumentacji projektu 2 | 2019-11-22 A | 2019-11-22 A |  | 0% → 100% | 126d → none |
| 42 | Tworzenie dokumentacji projektu 3 | 2019-11-29 A | 2019-11-29 A |  | 0% → 100% | 121d → none |
| 43 | Tworzenie dokumentacji projektu 4 | 2019-12-06 A | 2019-12-06 A |  | 0% → 100% | 116d → none |
| 44 | Tworzenie dokumentacji projektu 5 | 2019-12-13 A | 2019-12-13 A |  | 0% → 100% | 111d → none |
| 45 | Tworzenie dokumentacji projektu 6 | 2019-12-20 A | 2019-12-20 A |  | 0% → 100% | 106d → none |
| 46 | Tworzenie dokumentacji projektu 7 | 2020-01-03 A | 2020-01-03 A |  | 0% → 100% | 102d → none |
| 62 | **Tworzenie raportów z postępu projektu** | 2019-11-14 A |  |  | 0% → 35% |  |
| 63 | Tworzenie raportów z postępu projektu 1 | 2019-11-14 A | 2019-11-14 A |  | 0% → 100% | 132d → none |
| 64 | Tworzenie raportów z postępu projektu 2 | 2019-11-21 A | 2019-11-21 A |  | 0% → 100% | 127d → none |
| 65 | Tworzenie raportów z postępu projektu 3 | 2019-11-28 A | 2019-11-28 A |  | 0% → 100% | 122d → none |
| 66 | Tworzenie raportów z postępu projektu 4 | 2019-12-05 A | 2019-12-05 A |  | 0% → 100% | 117d → none |
| 67 | Tworzenie raportów z postępu projektu 5 | 2019-12-12 A | 2019-12-12 A |  | 0% → 100% | 112d → none |
| 68 | Tworzenie raportów z postępu projektu 6 | 2019-12-19 A | 2019-12-19 A |  | 0% → 100% | 107d → none |
| 69 | Tworzenie raportów z postępu projektu 7 | 2020-01-02 A | 2020-01-02 A |  | 0% → 100% | 103d → none |
| 84 | Utworzenie zespołu projektowego | 2019-12-06 A | 2019-12-06 A |  | 0% → 100% | 0d → none |
| 85 | **Prowadzenie badań** | 2019-12-09 A |  |  | 0% → 46% | 12d → 21.5d |
| 86 | Dokumentowanie wiedzy książkowej | 2019-12-09 A | 2020-01-15 A |  | 0% → 100% | 14.5d → none |
| 87 | Research zasobów potrzebnych do badań | 2019-12-09 A | 2019-12-09 A |  | 0% → 100% | 12d → none |
| 88 | Organizacja potrzenych do badań zasobów | 2019-12-10 A | 2019-12-16 A |  | 0% → 100% | 12d → none |
| 89 | Przeprowadzenie badań | 2019-12-18 → 2019-12-17 A (-1d) | 2020-01-16 → 2020-01-15 A (-1d) |  | 0% → 100% | 12d → none |
| 90 | Sporządzenie raportów z badań | 2020-01-17 → 2020-01-16 (-1d) | 2020-01-22 → 2020-01-21 (-1d) |  |  | 12d → 13.5d |
| 91 | Analiza danych z badań | 2020-01-23 → 2020-01-22 (-1d) | 2020-01-30 → 2020-01-29 (-1d) |  |  | 14.5d → 16d |
| 92 | Udokumentowanie wniosków z badań | 2020-01-23 → 2020-01-22 (-1d) | 2020-02-04 → 2020-02-03 (-1d) |  |  | 12d → 13.5d |
| 96 | **Projektowanie oprogramowania** | 2019-12-09 A |  |  | 0% → 53% | 0d → 28d |
| 97 | Specyfikacja wymagań funkcjonalnych | 2019-12-09 A | 2019-12-11 A |  | 0% → 100% | 0d → none |
| 98 | Specyfikacja wymagań interfejsowych | 2019-12-12 A | 2019-12-17 A |  | 0% → 100% | 7.5d → none |
| 99 | Specyfikacja wymagań prototypu | 2019-12-17 A | 2020-01-03 A |  | 0% → 100% | 11d → none |
| 100 | Specyfikacja wymagań pełnej aplikacji | 2020-01-03 A | 2020-01-16 A |  | 0% → 100% | 11d → none |
| 101 | Tworzenie makiet | 2020-01-07 A |  |  | 0% → 3% |  |
| 102 | Zamówienie grafik i dźwięków do makiet | 2020-01-07 A |  |  | 0% → 50% |  |
| 103 | Testowanie makiet | 2020-01-07 A |  |  | 0% → 3% |  |
| 104 | Zaprojektowanie systemu oceniania przepisów | 2019-12-12 A | 2019-12-13 A |  | 0% → 100% | 20.5d → none |
| 105 | Specyfikacja wymagań bazy danych do uczenia maszynowego | 2019-12-16 A | 2019-12-17 A |  | 0% → 100% | 20.5d → none |
| 106 | Projekt bazy danych do uczenia maszynowego | 2019-12-18 A | 2019-12-30 A |  | 0% → 100% | 20.5d → none |
| 107 | Zaprojektowanie miniencyklopedii | 2019-12-12 A | 2019-12-17 A |  | 0% → 100% | 3d → none |
| 111 | Zaprojektowanie działania asystenta kawy | 2019-12-16 A | 2020-01-23 → 2020-01-14 A (-9d) |  | 0% → 100% | 0d → none |
| 112 | **Wytwarzanie oprogramowania** | 2019-12-17 A |  |  | 0% → 4% | 7.5d → 16d |
| 113 | Projektowanie algorytmów dobierających przepis | 2020-02-05 → 2020-02-03 (-2d) | 2020-02-11 → 2020-02-10 (-1d) |  |  | 12d → 13.5d |
| 114 | Tworzenie prototypów systemów dobierających przepis | 2020-02-12 → 2020-02-10 (-2d) | 2020-02-28 → 2020-02-26 (-2d) |  |  | 12d → 13.5d |
| 115 | Wybranie najlepszego prototypu | 2020-02-28 → 2020-02-27 (-1d) | 2020-03-03 → 2020-03-02 (-1d) |  |  | 12d → 13.5d |
| 116 | Research architektury aplikacji | 2019-12-17 A | 2019-12-30 A |  | 0% → 100% | 7.5d → none |
| 118 | Implementacja algorytmów dobierających przepis | 2020-03-04 → 2020-03-02 (-2d) | 2020-03-12 → 2020-03-11 (-1d) |  |  | 12d → 13.5d |
| 123 | Implementacja systemu ocen przepisów | 2020-03-13 → 2020-03-11 (-2d) | 2020-03-23 → 2020-03-19 (-4d) |  |  | 16d → 17.5d |
| 124 | Implementacja bazy danych do uczenia maszynowego | 2020-03-23 → 2020-03-20 (-3d) | 2020-03-25 → 2020-03-24 (-1d) |  |  | 16d → 17.5d |
| 125 | Prototypowanie uczenia maszynowego | 2020-03-26 → 2020-03-24 (-2d) | 2020-04-07 → 2020-04-06 (-1d) |  |  | 16d → 17.5d |
| 126 | Implementacja uczenia maszynowego | 2020-04-08 → 2020-04-06 (-2d) | 2020-04-16 → 2020-04-15 (-1d) | 7d? → 5.5d? |  | 16d → 17.5d |

| ID | Task | Start | Finish | Complete | Total float |
| --- | --- | --- | --- | --- | --- |
| 131 | **Prowadzenie dokumentacji** | 2019-12-17 A |  | 0% → 20% |  |
| 132 | Prowadzenie dokumentacji 1 | 2019-12-17 A | 2019-12-17 A | 0% → 100% | 109d → none |
| 133 | Prowadzenie dokumentacji 2 | 2019-12-19 A | 2019-12-19 A | 0% → 100% | 107.5d → none |
| 134 | Prowadzenie dokumentacji 3 | 2020-01-02 A | 2020-01-02 A | 0% → 100% | 103.5d → none |

## Version 8 (data date 2020-01-07, saved 2020-01-10, file IV Etap - Marszałek.mpp)

Last finish stays 2020-06-02. Complete tasks 50 → 51.

Changed:

| ID | Task | Start | Finish | Duration | Complete | Total float |
| --- | --- | --- | --- | --- | --- | --- |
| 1 | **Zarządzanie projektem** |  |  |  | 49% → 48% |  |
| 34 | Rekrutacja pracowników |  | 2019-12-03 A → 2019-11-29 A (-4d) | 14d? → 12d |  |  |
| 35 | Pozyskiwanie zasobów do pracy |  | 2019-12-03 A → 2019-11-29 A (-4d) | 14d? → 12d |  |  |
| 36 | Organizacja stanowisk pracy |  | 2019-12-03 A → 2019-11-29 A (-4d) | 14d? → 12d |  |  |
| 38 | Zapewnienie możliwości stworzenia odpowiedniej architektury aplikacji |  | 2020-01-27 → 2020-01-22 A (-5d) | 15d? → 13d | 75% → 100% | 8.5d → none |
| 85 | **Prowadzenie badań** |  | 2020-03-16 → 2020-03-13 (-3d) | 63.5d? → 62.5d? | 46% → 39% | 21.5d → 22.5d |
| 86 | Dokumentowanie wiedzy książkowej |  | 2020-01-15 A → 2020-01-14 A (-1d) | 15d? → 14d |  |  |
| 89 | Przeprowadzenie badań |  | 2020-01-15 A → 2020-01-01 A (-14d) | 22d? → 12d |  |  |
| 90 | Sporządzenie raportów z badań | 2020-01-16 → 2020-01-02 (-14d) | 2020-01-21 → 2020-01-08 (-13d) | 4d? → 5d? |  | 13.5d → 22.5d |
| 91 | Analiza danych z badań | 2020-01-22 → 2020-01-09 (-13d) | 2020-01-29 → 2020-01-16 (-13d) |  |  | 16d → 25d |
| 92 | Udokumentowanie wniosków z badań | 2020-01-22 → 2020-01-09 (-13d) | 2020-02-03 → 2020-01-21 (-13d) |  |  | 13.5d → 22.5d |
| 93 | Zebranie i spisanie podstawowych informacji o kawie dla niewdrożonych użytkowników | 2020-01-16 → 2020-01-15 (-1d) | 2020-01-30 → 2020-01-29 (-1d) |  |  | 21.5d → 22.5d |
| 94 | Zredagowanie podstawowych informacji o kawie | 2020-01-30 → 2020-01-29 (-1d) | 2020-03-02 → 2020-02-28 (-3d) |  |  | 21.5d → 22.5d |
| 95 | Zakończenie badań | 2020-03-16 → 2020-03-13 (-3d) | 2020-03-16 → 2020-03-13 (-3d) |  |  | 21.5d → 22.5d |
| 96 | **Projektowanie oprogramowania** | 2019-12-09 A → 2019-11-04 A (-35d) |  | 46.5d? → 70.5d? |  |  |
| 97 | Specyfikacja wymagań funkcjonalnych | 2019-12-09 A → 2019-11-04 A (-35d) |  | 3d? → 8d? |  |  |
| 99 | Specyfikacja wymagań prototypu |  | 2020-01-03 A → 2019-12-31 A (-3d) | 10.5d? → 9d |  |  |
| 100 | Specyfikacja wymagań pełnej aplikacji |  | 2020-01-16 A → 2020-01-15 A (-1d) | 9d? → 8d |  |  |
| 111 | Zaprojektowanie działania asystenta kawy |  | 2020-01-14 A → 2020-01-13 A (-1d) | 11.5d? → 10d |  |  |
| 112 | **Wytwarzanie oprogramowania** |  |  |  | 4% → 3% |  |
| 113 | Projektowanie algorytmów dobierających przepis | 2020-02-03 → 2020-01-21 (-13d) | 2020-02-10 → 2020-01-28 (-13d) |  |  | 13.5d → 22.5d |
| 114 | Tworzenie prototypów systemów dobierających przepis | 2020-02-10 → 2020-01-28 (-13d) | 2020-02-26 → 2020-02-13 (-13d) |  |  | 13.5d → 22.5d |
| 115 | Wybranie najlepszego prototypu | 2020-02-27 → 2020-02-14 (-13d) | 2020-03-02 → 2020-02-18 (-13d) |  |  | 13.5d → 22.5d |
| 116 | Research architektury aplikacji |  | 2019-12-30 A → 2019-12-23 A (-7d) | 4.5d? → 4d |  |  |
| 117 | Konfiguracja architektury aplikacji | 2020-01-27 → 2020-01-22 (-5d) | 2020-01-31 → 2020-01-28 (-3d) |  |  | 8.5d → 11.5d |
| 118 | Implementacja algorytmów dobierających przepis | 2020-03-02 → 2020-02-18 (-13d) | 2020-03-11 → 2020-02-27 (-13d) |  |  | 13.5d → 22.5d |
| 123 | Implementacja systemu ocen przepisów | 2020-03-11 → 2020-02-27 (-13d) | 2020-03-19 → 2020-03-06 (-13d) |  |  | 17.5d → 26.5d |
| 124 | Implementacja bazy danych do uczenia maszynowego | 2020-03-20 → 2020-03-09 (-11d) | 2020-03-24 → 2020-03-11 (-13d) |  |  | 17.5d → 26.5d |
| 125 | Prototypowanie uczenia maszynowego | 2020-03-24 → 2020-03-11 (-13d) | 2020-04-06 → 2020-03-24 (-13d) |  |  | 17.5d → 26.5d |
| 126 | Implementacja uczenia maszynowego | 2020-04-06 → 2020-03-24 (-13d) | 2020-04-15 → 2020-03-30 (-16d) | 5.5d? → 4d? |  | 17.5d → 26.5d |
| 128 | Uzupełnienie bazy danych miniencyklopedii | 2020-03-16 → 2020-03-13 (-3d) | 2020-04-06 → 2020-04-03 (-3d) |  |  | 21.5d → 22.5d |
